# Children's book schedule

How a schedule from MS Project changed from version to version. A marks actual dates.

## Version 1 (saved 2023-10-03, file Gayathree_ViewTaskPath.mpp)

| ID | WBS | Task | Duration | Start | Finish | Predecessors | Total float |
| --- | --- | --- | --- | --- | --- | --- | --- |
| 1 | 1 | **Acquisition** | 25d | 2023-04-10 | 2023-05-12 |  | 0d |
| 2 |  | Manuscript received | 0d | 2023-04-10 | 2023-04-10 |  | 0d |
| 3 |  | Content edit | 15d | 2023-04-10 | 2023-04-28 | 2 | 0d |
| 4 |  | Author review of content edit | 10d | 2023-05-01 | 2023-05-12 | 3 | 0d |
| 5 |  | Handoff to Editorial | 0d | 2023-05-12 | 2023-05-12 | 4 | 0d |
| 6 | 2 | **Editorial** | 35d | 2023-05-15 | 2023-06-30 | 1 | 0d |
| 7 |  | Organize manuscript for copyedit | 5d | 2023-05-15 | 2023-05-19 |  | 0d |
| 8 |  | Copyedit | 15d | 2023-05-22 | 2023-06-09 | 7 | 0d |
| 9 |  | Author review of copyedit | 10d | 2023-06-12 | 2023-06-23 | 8 | 0d |
| 10 |  | Copyedit incorp | 5d | 2023-06-26 | 2023-06-30 | 9 | 0d |
| 11 |  | Handoff to Production | 0d | 2023-06-30 | 2023-06-30 | 10 | 0d |
| 12 | 3 | **Design and Production** | 63d | 2023-07-03 | 2023-09-27 | 6 | 0d |
| 13 |  | Set pages | 15d | 2023-07-03 | 2023-07-21 |  | 0d |
| 14 |  | Interior illustration design | 15d | 2023-07-24 | 2023-08-11 | 13 | 0d |
| 15 | 3.3 | **1st Pages review** | 25d | 2023-08-14 | 2023-09-15 | 14 | 0d |
| 16 |  | Proofread and index | 10d | 2023-08-14 | 2023-08-25 |  | 0d |
| 17 |  | Incorporate 1st Pages review | 5d | 2023-08-28 | 2023-09-01 | 16 | 0d |
| 18 |  | Send proofed pages to Production | 0d | 2023-09-01 | 2023-09-01 | 17 | 0d |
| 19 |  | Enter page corrections and index | 5d | 2023-09-04 | 2023-09-08 | 18 | 0d |
| 20 |  | Cover design | 5d | 2023-09-11 | 2023-09-15 | 19 | 0d |
| 21 | 3.4 | **2nd Pages review** | 8d | 2023-09-18 | 2023-09-27 |  | 0d |
| 22 |  | Proof and review | 4d | 2023-09-18 | 2023-09-21 | 20 | 0d |
| 23 |  | Send proofed pages to Production | 0d | 2023-09-21 | 2023-09-21 | 22 | 0d |
| 24 |  | Final review | 4d | 2023-09-22 | 2023-09-27 | 23 | 0d |
| 25 | 3.5 | **Design book's companion website** | 5d | 2023-09-18 | 2023-09-22 |  | 3d |
| 26 |  | Create mockup | 3d | 2023-09-18 | 2023-09-20 | 20 | 3d |
| 27 |  | Review with author | 2d | 2023-09-21 | 2023-09-22 | 26 | 3d |
| 28 | 4 | **Color prep and printing** | 41d | 2023-09-28 | 2023-11-23 |  | 0d |
| 29 |  | Send to color house | 1d | 2023-09-28 | 2023-09-28 | 24, 27 | 0d |
| 30 |  | Generate proofs | 10d | 2023-09-29 | 2023-10-12 | 29 | 0d |
| 31 |  | Print and ship | 30d | 2023-10-13 | 2023-11-23 | 30 | 0d |

## Version 2 (saved 2023-10-03, file Gayathree_ScheduleTasksAdvanced.mpp)

Last finish 2023-11-23 → 2023-11-09 (-14d).

Changed:

| ID | Task | Start | Finish | Duration | Total float | Predecessors | Other |
| --- | --- | --- | --- | --- | --- | --- | --- |
| 1 | **Acquisition** |  | 2023-05-12 → 2023-05-18 (+6d) | 25d → 29d | 0d → 0.5d |  |  |
| 3 | Content edit |  | 2023-04-28 → 2023-05-04 (+6d) |  | 0d → 0.5d |  |  |
| 4 | Author review of content edit | 2023-05-01 → 2023-05-05 (+4d) | 2023-05-12 → 2023-05-18 (+6d) |  | 0d → 0.5d |  |  |
| 5 | Handoff to Editorial | 2023-05-12 → 2023-05-18 (+6d) | 2023-05-12 → 2023-05-18 (+6d) |  | 0d → 0.5d |  |  |
| 6 | **Editorial** | 2023-05-15 → 2023-05-19 (+4d) | 2023-06-30 → 2023-07-04 (+4d) | 35d → 32.5d | 0d → 0.5d |  |  |
| 7 | Organize manuscript for copyedit | 2023-05-15 → 2023-05-19 (+4d) | 2023-05-19 → 2023-05-25 (+6d) |  | 0d → 0.5d |  |  |
| 8 | Copyedit | 2023-05-22 → 2023-05-26 (+4d) | 2023-06-09 → 2023-06-15 (+6d) |  | 0d → 0.5d |  |  |
| 9 | Author review of copyedit | 2023-06-12 → 2023-06-16 (+4d) | 2023-06-23 → 2023-06-29 (+6d) |  | 0d → 0.5d |  |  |
| 10 | Copyedit incorp | 2023-06-26 → 2023-06-27 (+1d) | 2023-06-30 → 2023-07-04 (+4d) |  | 0d → 0.5d | 9 → 9FS-2.5% |  |
| 11 | Handoff to Production | 2023-06-30 → 2023-07-04 (+4d) | 2023-06-30 → 2023-07-04 (+4d) |  | 0d → 0.5d |  |  |
| 12 | **Design and Production** | 2023-07-03 → 2023-07-04 (+1d) | 2023-09-27 → 2023-09-08 (-19d) | 63d → 48d | 0d → 0.5d |  |  |
| 13 | Set pages | 2023-07-03 → 2023-07-04 (+1d) | 2023-07-21 → 2023-07-25 (+4d) |  | 0d → 0.5d |  |  |
| 14 | Interior illustration design | 2023-07-24 → 2023-07-04 (-20d) | 2023-08-11 → 2023-07-25 (-17d) |  | 0d → 0.5d | 13 → 13SS |  |
| 15 | **1st Pages review** | 2023-08-14 → 2023-07-25 (-20d) | 2023-09-15 → 2023-08-29 (-17d) |  | 0d → 0.5d |  |  |
| 16 | Proofread and index | 2023-08-14 → 2023-07-25 (-20d) | 2023-08-25 → 2023-08-08 (-17d) |  | 0d → 0.5d |  | constraint none → start no earlier than 2023-07-20 |
| 17 | Incorporate 1st Pages review | 2023-08-28 → 2023-08-08 (-20d) | 2023-09-01 → 2023-08-15 (-17d) |  | 0d → 0.5d |  |  |
| 18 | Send proofed pages to Production | 2023-09-01 → 2023-08-15 (-17d) | 2023-09-01 → 2023-08-15 (-17d) |  | 0d → 0.5d |  |  |
| 19 | Enter page corrections and index | 2023-09-04 → 2023-08-15 (-20d) | 2023-09-08 → 2023-08-22 (-17d) |  | 0d → 0.5d |  |  |
| 20 | Cover design | 2023-09-11 → 2023-08-22 (-20d) | 2023-09-15 → 2023-08-29 (-17d) |  | 0d → 0.5d |  |  |
| 21 | **2nd Pages review** | 2023-09-18 → 2023-08-29 (-20d) | 2023-09-27 → 2023-09-08 (-19d) |  | 0d → 0.5d |  |  |
| 22 | Proof and review | 2023-09-18 → 2023-08-29 (-20d) | 2023-09-21 → 2023-09-04 (-17d) |  | 0d → 0.5d |  |  |
| 23 | Send proofed pages to Production | 2023-09-21 → 2023-09-04 (-17d) | 2023-09-21 → 2023-09-04 (-17d) |  | 0d → 0.5d |  |  |
| 24 | Final review | 2023-09-22 → 2023-09-04 (-18d) | 2023-09-27 → 2023-09-08 (-19d) |  | 0d → 0.5d |  |  |
| 25 | **Design book's companion website** | 2023-09-18 → 2023-08-29 (-20d) | 2023-09-22 → 2023-09-05 (-17d) |  | 3d → 3.5d |  |  |
| 26 | Create mockup | 2023-09-18 → 2023-08-29 (-20d) | 2023-09-20 → 2023-09-01 (-19d) |  | 3d → 3.5d |  |  |
| 27 | Review with author | 2023-09-21 → 2023-09-01 (-20d) | 2023-09-22 → 2023-09-05 (-17d) |  | 3d → 3.5d |  |  |
| 28 | **Color prep and printing** | 2023-09-28 → 2023-09-11 (-17d) | 2023-11-23 → 2023-11-09 (-14d) | 41d → 44d |  |  |  |
| 29 | Send to color house | 2023-09-28 → 2023-09-11 (-17d) | 2023-09-28 → 2023-09-11 (-17d) |  |  |  |  |
| 30 | Generate proofs | 2023-09-29 → 2023-09-12 (-17d) | 2023-10-12 → 2023-09-25 (-17d) |  |  |  |  |
| 31 | Print and ship | 2023-10-13 → 2023-09-29 (-14d) | 2023-11-23 → 2023-11-09 (-14d) |  |  | 30 → 30FS+3d |  |

## Version 3 (saved 2023-10-03, file Gayathree_FineTuneTasks.mpp)

Last finish stays 2023-11-09.

Added:

| ID | Task | Duration | Start | Finish | Constraint | Resources |
| --- | --- | --- | --- | --- | --- | --- |
| 1 | **Editorial Staff meeting** | 55.12d | 2023-04-17 08:00 | 2023-07-03 09:00 |  |  |
| 2 | Editorial Staff meeting 1 | 1h | 2023-04-17 08:00 | 2023-04-17 09:00 | start no earlier than 2023-04-17 08:00 | Carole Poland; Jun Cao; Hany Morcos |
| 3 | Editorial Staff meeting 2 | 1h | 2023-04-24 08:00 | 2023-04-24 09:00 | start no earlier than 2023-04-24 08:00 | Carole Poland; Jun Cao; Hany Morcos |
| 4 | Editorial Staff meeting 3 | 1h | 2023-05-01 08:00 | 2023-05-01 09:00 | start no earlier than 2023-05-01 08:00 | Carole Poland; Jun Cao; Hany Morcos |
| 5 | Editorial Staff meeting 4 | 1h | 2023-05-08 08:00 | 2023-05-08 09:00 | start no earlier than 2023-05-08 08:00 | Carole Poland; Jun Cao; Hany Morcos |
| 6 | Editorial Staff meeting 5 | 1h | 2023-05-15 08:00 | 2023-05-15 09:00 | start no earlier than 2023-05-15 08:00 | Carole Poland; Jun Cao; Hany Morcos |
| 7 | Editorial Staff meeting 6 | 1h | 2023-05-22 08:00 | 2023-05-22 09:00 | start no earlier than 2023-05-22 08:00 | Carole Poland; Jun Cao; Hany Morcos |
| 8 | Editorial Staff meeting 7 | 1h | 2023-05-29 08:00 | 2023-05-29 09:00 | start no earlier than 2023-05-29 08:00 | Carole Poland; Jun Cao; Hany Morcos |
| 9 | Editorial Staff meeting 8 | 1h | 2023-06-05 08:00 | 2023-06-05 09:00 | start no earlier than 2023-06-05 08:00 | Carole Poland; Jun Cao; Hany Morcos |
| 10 | Editorial Staff meeting 9 | 1h | 2023-06-12 08:00 | 2023-06-12 09:00 | start no earlier than 2023-06-12 08:00 | Carole Poland; Jun Cao; Hany Morcos |
| 11 | Editorial Staff meeting 10 | 1h | 2023-06-19 08:00 | 2023-06-19 09:00 | start no earlier than 2023-06-19 08:00 | Carole Poland; Jun Cao; Hany Morcos |
| 12 | Editorial Staff meeting 11 | 1h | 2023-06-26 08:00 | 2023-06-26 09:00 | start no earlier than 2023-06-26 08:00 | Carole Poland; Jun Cao; Hany Morcos |
| 13 | Editorial Staff meeting 12 | 1h | 2023-07-03 08:00 | 2023-07-03 09:00 | start no earlier than 2023-07-03 08:00 | Carole Poland; Jun Cao; Hany Morcos |

Changed:

| ID | Task | Start | Finish | Duration | Total float | Other |
| --- | --- | --- | --- | --- | --- | --- |
| 14 | **Acquisition** | 2023-04-10 → 2023-04-10 08:00 | 2023-05-18 → 2023-05-17 17:00 (-1d) | 29d → 28d | 0.5d → -5.5d |  |
| 15 | Manuscript received | 2023-04-10 → 2023-04-10 08:00 | 2023-04-10 → 2023-04-10 08:00 |  | 0.5d → -5.5d |  |
| 16 | Content edit | 2023-04-10 → 2023-04-10 08:00 | 2023-05-04 → 2023-05-03 17:00 (-1d) |  | 0.5d → -5.5d |  |
| 17 | Author review of content edit | 2023-05-05 → 2023-05-04 08:00 (-1d) | 2023-05-18 → 2023-05-17 17:00 (-1d) |  | 0.5d → -5.5d |  |
| 18 | Handoff to Editorial | 2023-05-18 → 2023-05-17 17:00 (-1d) | 2023-05-18 → 2023-05-17 17:00 (-1d) |  | 0.5d → -5.5d |  |
| 19 | **Editorial** | 2023-05-19 → 2023-05-18 08:00 (-1d) | 2023-07-04 → 2023-06-28 17:00 (-6d) | 32.5d → 30d | 0.5d → none |  |
| 20 | Organize manuscript for copyedit | 2023-05-19 → 2023-05-18 08:00 (-1d) | 2023-05-25 → 2023-05-24 17:00 (-1d) |  | 0.5d → -5.5d |  |
| 21 | Copyedit | 2023-05-26 → 2023-05-25 08:00 (-1d) | 2023-06-15 → 2023-06-21 17:00 (+6d) | 15d → 20d | 0.5d → -5.5d | resources Copyeditors [200%] → Copyeditors [150%] |
| 22 | Author review of copyedit | 2023-06-16 → 2023-06-22 08:00 (+6d) | 2023-06-29 → 2023-07-05 17:00 (+6d) |  | 0.5d → -5.5d |  |
| 23 | Copyedit incorp | 2023-06-27 → 2023-07-03 13:00 (+6d) | 2023-07-04 → 2023-07-10 12:00 (+6d) |  | 0.5d → -5.5d |  |
| 24 | Handoff to Production | 2023-07-04 → 2023-07-10 12:00 (+6d) | 2023-07-04 → 2023-07-10 12:00 (+6d) |  | 0.5d → -5.5d |  |
| 25 | **Design and Production** | 2023-07-04 → 2023-06-29 08:00 (-5d) | 2023-09-08 → 2023-09-06 17:00 (-2d) | 48d → 50d | 0.5d → 2d |  |
| 26 | Set pages | 2023-07-04 → 2023-06-29 08:00 (-5d) | 2023-07-25 → 2023-07-19 17:00 (-6d) |  | 0.5d → 2d |  |
| 27 | Interior illustration design | 2023-07-04 → 2023-06-29 08:00 (-5d) | 2023-07-25 → 2023-07-19 17:00 (-6d) |  | 0.5d → 2d |  |
| 28 | **1st Pages review** | 2023-07-25 → 2023-07-20 08:00 (-5d) | 2023-08-29 → 2023-08-23 17:00 (-6d) |  | 0.5d → 2d |  |
| 29 | Proofread and index | 2023-07-25 → 2023-07-20 08:00 (-5d) | 2023-08-08 → 2023-08-02 17:00 (-6d) |  | 0.5d → 2d | constraint start no earlier than 2023-07-20 → start no earlier than 2018-07-20 08:00 |
| 30 | Incorporate 1st Pages review | 2023-08-08 → 2023-08-03 08:00 (-5d) | 2023-08-15 → 2023-08-09 17:00 (-6d) |  | 0.5d → 2d |  |
| 31 | Send proofed pages to Production | 2023-08-15 → 2023-08-09 17:00 (-6d) | 2023-08-15 → 2023-08-09 17:00 (-6d) |  | 0.5d → 2d |  |
| 32 | Enter page corrections and index | 2023-08-15 → 2023-08-10 08:00 (-5d) | 2023-08-22 → 2023-08-16 17:00 (-6d) |  | 0.5d → 2d |  |
| 33 | Cover design | 2023-08-22 → 2023-08-17 08:00 (-5d) | 2023-08-29 → 2023-08-23 17:00 (-6d) |  | 0.5d → 2d |  |
| 34 | **2nd Pages review** | 2023-08-29 → 2023-08-24 08:00 (-5d) | 2023-09-08 → 2023-09-06 17:00 (-2d) | 8d → 10d | 0.5d → 2d |  |
| 35 | Proof and review | 2023-08-29 → 2023-08-24 08:00 (-5d) | 2023-09-04 → 2023-08-30 17:00 (-5d) | 4d → 5d | 0.5d → 2d |  |
| 36 | Send proofed pages to Production | 2023-09-04 → 2023-08-30 17:00 (-5d) | 2023-09-04 → 2023-08-30 17:00 (-5d) |  | 0.5d → 2d |  |
| 37 | Final review | 2023-09-04 → 2023-08-31 08:00 (-4d) | 2023-09-08 → 2023-09-06 17:00 (-2d) | 4d → 5d | 0.5d → 2d |  |
| 38 | **Design book's companion website** | 2023-08-29 → 2023-08-24 08:00 (-5d) | 2023-09-05 → 2023-08-30 17:00 (-6d) |  | 3.5d → 7d |  |
| 39 | Create mockup | 2023-08-29 → 2023-08-24 08:00 (-5d) | 2023-09-01 → 2023-08-28 17:00 (-4d) |  | 3.5d → 7d |  |
| 40 | Review with author | 2023-09-01 → 2023-08-29 08:00 (-3d) | 2023-09-05 → 2023-08-30 17:00 (-6d) |  | 3.5d → 7d |  |
| 41 | **Color prep and printing** | 2023-09-11 → 2023-09-11 08:00 | 2023-11-09 → 2023-11-09 17:00 |  |  |  |
| 42 | Send to color house | 2023-09-11 → 2023-09-11 08:00 | 2023-09-11 → 2023-09-11 17:00 |  |  |  |
| 43 | Generate proofs | 2023-09-12 → 2023-09-12 08:00 | 2023-09-25 → 2023-09-25 17:00 |  |  |  |
| 44 | Print and ship | 2023-09-29 → 2023-09-29 08:00 | 2023-11-09 → 2023-11-09 17:00 |  |  |  |

## Version 4 (saved 2023-10-10, file Gayathree_FineTuneResources.mpp)

Last finish 2023-11-09 → 2023-11-17 (+8d).

Added:

| ID | Task | Duration | Start | Finish | Constraint | Resources |
| --- | --- | --- | --- | --- | --- | --- |
| 1 | **Editorial staff meeting** | 60.12d | 2023-04-17 08:00 | 2023-07-10 09:00 |  |  |
| 2 | Editorial staff meeting 1 | 1h | 2023-04-17 08:00 | 2023-04-17 09:00 | start no earlier than 2023-04-17 08:00 | Carole Poland; Hany Morcos; Jun Cao |
| 3 | Editorial staff meeting 2 | 1h | 2023-04-24 08:00 | 2023-04-24 09:00 | start no earlier than 2023-04-24 08:00 | Carole Poland; Hany Morcos; Jun Cao |
| 4 | Editorial staff meeting 3 | 1h | 2023-05-01 08:00 | 2023-05-01 09:00 | start no earlier than 2023-05-01 08:00 | Carole Poland; Hany Morcos; Jun Cao |
| 5 | Editorial staff meeting 4 | 1h | 2023-05-08 08:00 | 2023-05-08 09:00 | start no earlier than 2023-05-08 08:00 | Carole Poland; Hany Morcos; Jun Cao |
| 6 | Editorial staff meeting 5 | 1h | 2023-05-15 08:00 | 2023-05-15 09:00 | start no earlier than 2023-05-15 08:00 | Carole Poland; Hany Morcos; Jun Cao |
| 7 | Editorial staff meeting 6 | 1h | 2023-05-22 08:00 | 2023-05-22 09:00 | start no earlier than 2023-05-22 08:00 | Carole Poland; Hany Morcos; Jun Cao |
| 8 | Editorial staff meeting 7 | 1h | 2023-05-29 08:00 | 2023-05-29 09:00 | start no earlier than 2023-05-29 08:00 | Carole Poland; Hany Morcos; Jun Cao |
| 9 | Editorial staff meeting 8 | 1h | 2023-06-05 08:00 | 2023-06-05 09:00 | start no earlier than 2023-06-05 08:00 | Carole Poland; Hany Morcos; Jun Cao |
| 10 | Editorial staff meeting 9 | 1h | 2023-06-12 08:00 | 2023-06-12 09:00 | start no earlier than 2023-06-12 08:00 | Carole Poland; Hany Morcos; Jun Cao |
| 11 | Editorial staff meeting 10 | 1h | 2023-06-19 08:00 | 2023-06-19 09:00 | start no earlier than 2023-06-19 08:00 | Carole Poland; Hany Morcos; Jun Cao |
| 12 | Editorial staff meeting 11 | 1h | 2023-06-26 08:00 | 2023-06-26 09:00 | start no earlier than 2023-06-26 08:00 | Carole Poland; Hany Morcos; Jun Cao |
| 13 | Editorial staff meeting 12 | 1h | 2023-07-03 08:00 | 2023-07-03 09:00 | start no earlier than 2023-07-03 08:00 | Carole Poland; Hany Morcos; Jun Cao |
| 14 | Editorial staff meeting 13 | 1h | 2023-07-10 08:00 | 2023-07-10 09:00 | start no earlier than 2023-07-10 08:00 | Carole Poland; Hany Morcos; Jun Cao |

Removed: 1 Editorial Staff meeting; 2 Editorial Staff meeting 1; 3 Editorial Staff meeting 2; 4 Editorial Staff meeting 3; 5 Editorial Staff meeting 4; 6 Editorial Staff meeting 5; 7 Editorial Staff meeting 6; 8 Editorial Staff meeting 7; 9 Editorial Staff meeting 8; 10 Editorial Staff meeting 9; 11 Editorial Staff meeting 10; 12 Editorial Staff meeting 11; 13 Editorial Staff meeting 12

Changed:

| ID | Task | Start | Finish | Duration | Total float | Other |
| --- | --- | --- | --- | --- | --- | --- |
| 15 | **Acquisition** |  | 2023-05-17 17:00 → 2023-05-19 17:00 (+2d) | 28d → 30d | -5.5d → -1.5d |  |
| 18 | Author review of content edit |  | 2023-05-17 17:00 → 2023-05-19 17:00 (+2d) | 10d → 12d | -5.5d → -1.5d |  |
| 19 | Handoff to Editorial | 2023-05-17 17:00 → 2023-05-19 17:00 (+2d) | 2023-05-17 17:00 → 2023-05-19 17:00 (+2d) |  | -5.5d → -1.5d |  |
| 26 | **Design and Production** |  | 2023-09-06 17:00 → 2023-09-07 17:00 (+1d) | 50d → 51d | 2d → 7d |  |
| 29 | **1st Pages review** | 2023-07-20 08:00 → 2023-07-21 08:00 (+1d) | 2023-08-23 17:00 → 2023-08-24 17:00 (+1d) |  | 2d → 7d |  |
| 30 | Proofread and index | 2023-07-20 08:00 → 2023-07-21 08:00 (+1d) | 2023-08-02 17:00 → 2023-08-03 17:00 (+1d) |  | 2d → 7d | constraint start no earlier than 2018-07-20 08:00 → start no earlier than 2023-07-21 08:00 |
| 31 | Incorporate 1st Pages review | 2023-08-03 08:00 → 2023-08-04 08:00 (+1d) | 2023-08-09 17:00 → 2023-08-10 17:00 (+1d) |  | 2d → 7d |  |
| 32 | Send proofed pages to Production | 2023-08-09 17:00 → 2023-08-10 17:00 (+1d) | 2023-08-09 17:00 → 2023-08-10 17:00 (+1d) |  | 2d → 7d |  |
| 33 | Enter page corrections and index | 2023-08-10 08:00 → 2023-08-11 08:00 (+1d) | 2023-08-16 17:00 → 2023-08-17 17:00 (+1d) |  | 2d → 7d |  |
| 34 | Cover design | 2023-08-17 08:00 → 2023-08-18 08:00 (+1d) | 2023-08-23 17:00 → 2023-08-24 17:00 (+1d) |  | 2d → 7d |  |
| 35 | **2nd Pages review** | 2023-08-24 08:00 → 2023-08-25 08:00 (+1d) | 2023-09-06 17:00 → 2023-09-07 17:00 (+1d) |  | 2d → 7d |  |
| 36 | Proof and review | 2023-08-24 08:00 → 2023-08-25 08:00 (+1d) | 2023-08-30 17:00 → 2023-08-31 17:00 (+1d) |  | 2d → 7d |  |
| 37 | Send proofed pages to Production | 2023-08-30 17:00 → 2023-08-31 17:00 (+1d) | 2023-08-30 17:00 → 2023-08-31 17:00 (+1d) |  | 2d → 7d |  |
| 38 | Final review | 2023-08-31 08:00 → 2023-09-01 08:00 (+1d) | 2023-09-06 17:00 → 2023-09-07 17:00 (+1d) |  | 2d → 7d |  |
| 39 | **Design book's companion website** | 2023-08-24 08:00 → 2023-08-25 08:00 (+1d) | 2023-08-30 17:00 → 2023-08-31 17:00 (+1d) |  | 7d → 12d |  |
| 40 | Create mockup | 2023-08-24 08:00 → 2023-08-25 08:00 (+1d) | 2023-08-28 17:00 → 2023-08-29 17:00 (+1d) |  | 7d → 12d |  |
| 41 | Review with author | 2023-08-29 08:00 → 2023-08-30 08:00 (+1d) | 2023-08-30 17:00 → 2023-08-31 17:00 (+1d) |  | 7d → 12d |  |
| 42 | **Color prep and printing** |  | 2023-11-09 17:00 → 2023-11-17 17:00 (+8d) | 44d → 50d | 0d → none |  |

## Version 5 (saved 2023-10-10, file Gayathree_FineTuneAssignments.mpp)

Last finish stays 2023-11-17.

Added:

| ID | Task | Duration | Start | Finish | Resources |
| --- | --- | --- | --- | --- | --- |
| 46 | **Book launch prep** | 6d? | 2018-08-13 08:00 | 2018-08-20 17:00 |  |
| 47 | Launch planning | 1d? | 2018-08-13 08:00 | 2018-08-13 17:00 | Carole Poland [50%] |
| 48 | Assign launch team members | 1d | 2018-08-14 08:00 | 2018-08-14 17:00 | Carole Poland |
| 49 | Complete author questionnaire | 1d | 2018-08-20 08:00 | 2018-08-20 17:00 | Hany Morcos [50%] |
| 50 | Schedule author interviews | 1d? | 2018-08-13 08:00 | 2018-08-13 17:00 |  |

Changed:

| ID | Task | Start | Finish | Duration | Total float | Predecessors | Other |
| --- | --- | --- | --- | --- | --- | --- | --- |
| 2 | Editorial staff meeting 1 |  |  |  |  |  | resources Carole Poland; Hany Morcos; Jun Cao → Carole Poland; Jun Cao; Hany Morcos |
| 3 | Editorial staff meeting 2 |  |  |  |  |  | resources Carole Poland; Hany Morcos; Jun Cao → Carole Poland; Jun Cao; Hany Morcos |
| 4 | Editorial staff meeting 3 |  |  |  |  |  | resources Carole Poland; Hany Morcos; Jun Cao → Carole Poland; Jun Cao; Hany Morcos |
| 5 | Editorial staff meeting 4 |  |  |  |  |  | resources Carole Poland; Hany Morcos; Jun Cao → Carole Poland; Jun Cao; Hany Morcos |
| 6 | Editorial staff meeting 5 |  |  |  |  |  | resources Carole Poland; Hany Morcos; Jun Cao → Carole Poland; Jun Cao; Hany Morcos |
| 7 | Editorial staff meeting 6 |  |  |  |  |  | resources Carole Poland; Hany Morcos; Jun Cao → Carole Poland; Jun Cao; Hany Morcos |
| 8 | Editorial staff meeting 7 |  |  |  |  |  | resources Carole Poland; Hany Morcos; Jun Cao → Carole Poland; Jun Cao; Hany Morcos |
| 9 | Editorial staff meeting 8 |  |  |  |  |  | resources Carole Poland; Hany Morcos; Jun Cao → Carole Poland; Jun Cao; Hany Morcos |
| 10 | Editorial staff meeting 9 |  |  |  |  |  | resources Carole Poland; Hany Morcos; Jun Cao → Carole Poland; Jun Cao; Hany Morcos |
| 11 | Editorial staff meeting 10 |  |  |  |  |  | resources Carole Poland; Hany Morcos; Jun Cao → Carole Poland; Jun Cao; Hany Morcos |
| 12 | Editorial staff meeting 11 |  |  |  |  |  | resources Carole Poland; Hany Morcos; Jun Cao → Carole Poland; Jun Cao; Hany Morcos |
| 13 | Editorial staff meeting 12 |  |  |  |  |  | resources Carole Poland; Hany Morcos; Jun Cao → Carole Poland; Jun Cao; Hany Morcos |
| 14 | Editorial staff meeting 13 |  |  |  |  |  | resources Carole Poland; Hany Morcos; Jun Cao → Carole Poland; Jun Cao; Hany Morcos |
| 15 | **Acquisition** | 2023-04-10 08:00 → 2023-04-09 08:00 (-1d) | 2023-05-19 17:00 → 2023-05-17 17:00 (-2d) | 30d → 28d | -1.5d → 0.5d |  |  |
| 16 | Manuscript received | 2023-04-10 08:00 → 2023-04-09 08:00 (-1d) | 2023-04-10 08:00 → 2023-04-09 08:00 (-1d) |  | -1.5d → 0.5d |  |  |
| 18 | Author review of content edit |  | 2023-05-19 17:00 → 2023-05-17 17:00 (-2d) | 12d → 10d | -1.5d → 0.5d |  | resources Tad Orman; Copyeditors [25%] → Tad Orman; Copyeditors |
| 19 | Handoff to Editorial | 2023-05-19 17:00 → 2023-05-17 17:00 (-2d) | 2023-05-19 17:00 → 2023-05-17 17:00 (-2d) |  | -1.5d → 0.5d |  |  |
| 20 | **Editorial** | 2023-05-18 08:00 → 2023-05-17 08:00 (-1d) | 2023-06-28 17:00 → 2023-06-27 17:00 (-1d) |  |  |  |  |
| 21 | Organize manuscript for copyedit | 2023-05-18 08:00 → 2023-05-17 08:00 (-1d) | 2023-05-24 17:00 → 2023-05-23 17:00 (-1d) |  | 0.5d → 1.5d |  |  |
| 22 | Copyedit | 2023-05-25 08:00 → 2023-05-24 08:00 (-1d) | 2023-06-21 17:00 → 2023-06-20 17:00 (-1d) |  | 0.5d → 1.5d |  |  |
| 23 | Author review of copyedit | 2023-06-22 08:00 → 2023-06-21 08:00 (-1d) | 2023-07-05 17:00 → 2023-07-04 17:00 (-1d) |  | 0.5d → 1.5d |  |  |
| 24 | Copyedit incorp | 2023-07-03 13:00 → 2023-06-30 13:00 (-3d) | 2023-07-10 12:00 → 2023-07-07 12:00 (-3d) |  | 0.5d → 1.5d |  |  |
| 25 | Handoff to Production | 2023-07-10 12:00 → 2023-07-07 12:00 (-3d) | 2023-07-10 12:00 → 2023-07-07 12:00 (-3d) |  | 0.5d → 1.5d |  |  |
| 26 | **Design and Production** | 2023-06-29 08:00 → 2023-06-28 08:00 (-1d) | 2023-09-07 17:00 → 2023-09-06 17:00 (-1d) |  | 7d → 8d |  |  |
| 27 | Set pages | 2023-06-29 08:00 → 2023-06-28 08:00 (-1d) | 2023-07-19 17:00 → 2023-07-18 17:00 (-1d) |  | 8d → 9d |  |  |
| 28 | Interior illustration design | 2023-06-29 08:00 → 2023-06-28 08:00 (-1d) | 2023-07-19 17:00 → 2023-07-18 17:00 (-1d) |  | 8d → 9d |  | resources Luis Sousa → Luis Sousa; Hany Morcos |
| 29 | **1st Pages review** | 2023-07-21 08:00 → 2023-07-20 08:00 (-1d) | 2023-08-24 17:00 → 2023-08-23 17:00 (-1d) |  | 7d → 8d |  |  |
| 30 | Proofread and index | 2023-07-21 08:00 → 2023-07-20 08:00 (-1d) | 2023-08-03 17:00 → 2023-08-02 17:00 (-1d) |  | 7d → 8d |  | constraint start no earlier than 2023-07-21 08:00 → start no earlier than 2023-07-20 08:00 |
| 31 | Incorporate 1st Pages review | 2023-08-04 08:00 → 2023-08-03 08:00 (-1d) | 2023-08-10 17:00 → 2023-08-09 17:00 (-1d) |  | 7d → 8d |  |  |
| 32 | Send proofed pages to Production | 2023-08-10 17:00 → 2023-08-09 17:00 (-1d) | 2023-08-10 17:00 → 2023-08-09 17:00 (-1d) |  | 7d → 8d |  |  |
| 33 | Enter page corrections and index | 2023-08-11 08:00 → 2023-08-10 08:00 (-1d) | 2023-08-17 17:00 → 2023-08-16 17:00 (-1d) |  | 7d → 8d |  |  |
| 34 | Cover design | 2023-08-18 08:00 → 2023-08-17 08:00 (-1d) | 2023-08-24 17:00 → 2023-08-23 17:00 (-1d) |  | 7d → 8d |  |  |
| 35 | **2nd Pages review** | 2023-08-25 08:00 → 2023-08-24 08:00 (-1d) | 2023-09-07 17:00 → 2023-09-06 17:00 (-1d) |  | 7d → 8d |  |  |
| 36 | Proof and review | 2023-08-25 08:00 → 2023-08-24 08:00 (-1d) | 2023-08-31 17:00 → 2023-08-30 17:00 (-1d) |  | 7d → 8d |  |  |
| 37 | Send proofed pages to Production | 2023-08-31 17:00 → 2023-08-30 17:00 (-1d) | 2023-08-31 17:00 → 2023-08-30 17:00 (-1d) |  | 7d → 8d |  |  |
| 38 | Final review | 2023-09-01 08:00 → 2023-08-31 08:00 (-1d) | 2023-09-07 17:00 → 2023-09-06 17:00 (-1d) |  | 7d → 8d |  | resources Jane Dow; Hany Morcos; Carole Poland → Jane Dow; Hany Morcos [50%]; Carole Poland [50%]; Advance Proofs [20 copies] |
| 39 | **Design book's companion website** | 2023-08-25 08:00 → 2023-08-24 08:00 (-1d) | 2023-08-31 17:00 → 2023-08-30 17:00 (-1d) |  | 12d → 13d | none → 29 |  |
| 40 | Create mockup | 2023-08-25 08:00 → 2023-08-24 08:00 (-1d) | 2023-08-29 17:00 → 2023-08-28 17:00 (-1d) |  | 12d → 13d | 34 → none | resources Luis Sousa → Luis Sousa; Hany Morcos |
| 41 | Review with author | 2023-08-30 08:00 → 2023-08-29 08:00 (-1d) | 2023-08-31 17:00 → 2023-08-30 17:00 (-1d) |  | 12d → 13d |  |  |
| 42 | **Color prep and printing** |  |  |  |  | none → 39 |  |
| 43 | Send to color house |  |  |  |  | 38, 41 → 35 |  |

## Version 6 (saved 2023-10-10, file Gayathree_FineTunePlan.mpp)

Last finish stays 2023-11-17.

Added:

| ID | Task | Duration | Start | Finish | Predecessors | Resources |
| --- | --- | --- | --- | --- | --- | --- |
| 51 | Design and order marketing material | 5d | 2023-09-12 08:00 | 2023-09-18 17:00 | 50 | Hany Morcos |

Changed:

| ID | Task | Start | Finish | Duration | Total float | Predecessors | Other |
| --- | --- | --- | --- | --- | --- | --- | --- |
| 15 | **Acquisition** | 2023-04-09 08:00 → 2023-04-10 08:00 (+1d) | 2023-05-17 17:00 → 2023-05-19 17:00 (+2d) | 28d → 30d | 0.5d → 7.25d |  |  |
| 16 | Manuscript received | 2023-04-09 08:00 → 2023-04-10 08:00 (+1d) | 2023-04-09 08:00 → 2023-04-10 08:00 (+1d) |  | 0.5d → 7.25d |  |  |
| 18 | Author review of content edit |  | 2023-05-17 17:00 → 2023-05-19 17:00 (+2d) | 10d → 12d | 0.5d → 7.25d |  |  |
| 19 | Handoff to Editorial | 2023-05-17 17:00 → 2023-05-19 17:00 (+2d) | 2023-05-17 17:00 → 2023-05-19 17:00 (+2d) |  | 0.5d → 7.25d |  |  |
| 20 | **Editorial** | 2023-05-17 08:00 → 2023-05-18 08:00 (+1d) | 2023-06-27 17:00 → 2023-06-28 17:00 (+1d) |  |  |  |  |
| 21 | Organize manuscript for copyedit | 2023-05-17 08:00 → 2023-05-18 08:00 (+1d) | 2023-05-23 17:00 → 2023-05-24 17:00 (+1d) |  | 1.5d → 9.25d |  |  |
| 22 | Copyedit | 2023-05-24 08:00 → 2023-05-25 08:00 (+1d) | 2023-06-20 17:00 → 2023-06-09 10:00 (-11d) | 20d → 11.25d | 1.5d → 9.25d |  | resources Copyeditors [150%] → Copyeditors [200%] |
| 23 | Author review of copyedit | 2023-06-21 08:00 → 2023-06-09 10:00 (-12d) | 2023-07-04 17:00 → 2023-06-23 10:00 (-11d) |  | 1.5d → 9.25d |  |  |
| 24 | Copyedit incorp | 2023-06-30 13:00 → 2023-06-20 15:00 (-10d) | 2023-07-07 12:00 → 2023-06-27 15:00 (-10d) |  | 1.5d → 9.25d |  | resources Hany Morcos → Carole Poland |
| 25 | Handoff to Production | 2023-07-07 12:00 → 2023-06-27 15:00 (-10d) | 2023-07-07 12:00 → 2023-06-27 15:00 (-10d) |  | 1.5d → 9.25d |  |  |
| 26 | **Design and Production** | 2023-06-28 08:00 → 2023-06-29 08:00 (+1d) | 2023-09-06 17:00 → 2023-09-07 17:00 (+1d) |  | 8d → 7d |  |  |
| 27 | Set pages | 2023-06-28 08:00 → 2023-06-29 08:00 (+1d) | 2023-07-18 17:00 → 2023-07-19 17:00 (+1d) |  | 9d → 8d |  |  |
| 28 | Interior illustration design | 2023-06-28 08:00 → 2023-06-29 08:00 (+1d) | 2023-07-18 17:00 → 2023-07-19 17:00 (+1d) |  | 9d → 8d |  |  |
| 29 | **1st Pages review** | 2023-07-20 08:00 → 2023-07-21 08:00 (+1d) | 2023-08-23 17:00 → 2023-08-24 17:00 (+1d) |  | 8d → 7d |  |  |
| 30 | Proofread and index | 2023-07-20 08:00 → 2023-07-21 08:00 (+1d) | 2023-08-02 17:00 → 2023-08-03 17:00 (+1d) |  | 8d → 7d |  | constraint start no earlier than 2023-07-20 08:00 → start no earlier than 2023-07-21 08:00 |
| 31 | Incorporate 1st Pages review | 2023-08-03 08:00 → 2023-08-04 08:00 (+1d) | 2023-08-09 17:00 → 2023-08-10 17:00 (+1d) |  | 8d → 7d |  |  |
| 32 | Send proofed pages to Production | 2023-08-09 17:00 → 2023-08-10 17:00 (+1d) | 2023-08-09 17:00 → 2023-08-10 17:00 (+1d) |  | 8d → 7d |  |  |
| 33 | Enter page corrections and index | 2023-08-10 08:00 → 2023-08-11 08:00 (+1d) | 2023-08-16 17:00 → 2023-08-17 17:00 (+1d) |  | 8d → 7d |  |  |
| 34 | Cover design | 2023-08-17 08:00 → 2023-08-18 08:00 (+1d) | 2023-08-23 17:00 → 2023-08-24 17:00 (+1d) |  | 8d → 7d |  |  |
| 35 | **2nd Pages review** | 2023-08-24 08:00 → 2023-08-25 08:00 (+1d) | 2023-09-06 17:00 → 2023-09-07 17:00 (+1d) |  | 8d → 7d |  |  |
| 36 | Proof and review | 2023-08-24 08:00 → 2023-08-25 08:00 (+1d) | 2023-08-30 17:00 → 2023-08-31 17:00 (+1d) |  | 8d → 7d |  |  |
| 37 | Send proofed pages to Production | 2023-08-30 17:00 → 2023-08-31 17:00 (+1d) | 2023-08-30 17:00 → 2023-08-31 17:00 (+1d) |  | 8d → 7d |  |  |
| 38 | Final review | 2023-08-31 08:00 → 2023-09-01 08:00 (+1d) | 2023-09-06 17:00 → 2023-09-07 17:00 (+1d) |  | 8d → 7d |  | resources Jane Dow; Hany Morcos [50%]; Carole Poland [50%]; Advance Proofs [20 copies] → Jane Dow; Hany Morcos [50%]; Carole Poland [50%] |
| 39 | **Design book's companion website** | 2023-08-24 08:00 → 2023-08-25 08:00 (+1d) | 2023-08-30 17:00 → 2023-08-31 17:00 (+1d) |  | 13d → 12d |  |  |
| 40 | Create mockup | 2023-08-24 08:00 → 2023-08-25 08:00 (+1d) | 2023-08-28 17:00 → 2023-08-29 17:00 (+1d) |  | 13d → 12d |  |  |
| 41 | Review with author | 2023-08-29 08:00 → 2023-08-30 08:00 (+1d) | 2023-08-30 17:00 → 2023-08-31 17:00 (+1d) |  | 13d → 12d |  |  |
| 46 | **Book launch prep** | 2018-08-13 08:00 → 2023-08-25 08:00 (+1838d) | 2018-08-20 17:00 → 2023-09-18 17:00 (+1855d) | 6d? → 17d | 0d → 44d |  |  |
| 47 | Launch planning | 2018-08-13 08:00 → 2023-08-25 08:00 (+1838d) | 2018-08-13 17:00 → 2023-08-31 17:00 (+1844d) | 1d? → 5d | none → 44d | none → 39 | resources Carole Poland [50%] → Carole Poland [50%]; Jane Dow |
| 48 | Assign launch team members | 2018-08-14 08:00 → 2023-09-01 08:00 (+1844d) | 2018-08-14 17:00 → 2023-09-01 17:00 (+1844d) |  | none → 44d | none → 47 |  |
| 49 | Complete author questionnaire | 2018-08-20 08:00 → 2023-09-04 08:00 (+1841d) | 2018-08-20 17:00 → 2023-09-08 17:00 (+1845d) | 1d → 5d | none → 44d | none → 48 | resources Hany Morcos [50%] → Hany Morcos; Tad Orman |
| 50 | Schedule author interviews | 2018-08-13 08:00 → 2023-09-11 08:00 (+1855d) | 2018-08-13 17:00 → 2023-09-11 17:00 (+1855d) | 1d? → 1d | none → 44d | none → 49 | resources none → Hany Morcos |

## Version 7 (saved 2023-11-07, file OrganizeDetails_Gayathree.mpp)

Last finish 2023-11-17 → 2023-11-16 (-1d).

Changed:

| ID | Task | Start | Finish | Duration | Total float | Other |
| --- | --- | --- | --- | --- | --- | --- |
| 2 | Editorial staff meeting 1 |  |  |  | 154d → 153.5d | resources Carole Poland; Jun Cao; Hany Morcos → Carole Poland; Jun Cao; Hany Morcos; Dan Jump [50%] |
| 3 | Editorial staff meeting 2 |  |  |  | 149d → 148.5d | resources Carole Poland; Jun Cao; Hany Morcos → Carole Poland; Jun Cao; Hany Morcos; Dan Jump [50%] |
| 4 | Editorial staff meeting 3 |  |  |  | 144d → 143.5d | resources Carole Poland; Jun Cao; Hany Morcos → Carole Poland; Jun Cao; Hany Morcos; Dan Jump [50%] |
| 5 | Editorial staff meeting 4 |  |  |  | 139d → 138.5d | resources Carole Poland; Jun Cao; Hany Morcos → Carole Poland; Jun Cao; Hany Morcos; Dan Jump [50%] |
| 6 | Editorial staff meeting 5 |  |  |  | 134d → 133.5d | resources Carole Poland; Jun Cao; Hany Morcos → Carole Poland; Jun Cao; Hany Morcos; Dan Jump [50%] |
| 7 | Editorial staff meeting 6 |  |  |  | 129d → 128.5d | resources Carole Poland; Jun Cao; Hany Morcos → Carole Poland; Jun Cao; Hany Morcos; Dan Jump [50%] |
| 8 | Editorial staff meeting 7 |  |  |  | 124d → 123.5d | resources Carole Poland; Jun Cao; Hany Morcos → Carole Poland; Jun Cao; Hany Morcos; Dan Jump [50%] |
| 9 | Editorial staff meeting 8 |  |  |  | 119d → 118.5d | resources Carole Poland; Jun Cao; Hany Morcos → Carole Poland; Jun Cao; Hany Morcos; Dan Jump [50%] |
| 10 | Editorial staff meeting 9 |  |  |  | 114d → 113.5d | resources Carole Poland; Jun Cao; Hany Morcos → Carole Poland; Jun Cao; Hany Morcos; Dan Jump [50%] |
| 11 | Editorial staff meeting 10 |  |  |  | 109d → 108.5d | resources Carole Poland; Jun Cao; Hany Morcos → Carole Poland; Jun Cao; Hany Morcos; Dan Jump [50%] |
| 12 | Editorial staff meeting 11 |  |  |  | 104d → 103.5d | resources Carole Poland; Jun Cao; Hany Morcos → Carole Poland; Jun Cao; Hany Morcos; Dan Jump [50%] |
| 13 | Editorial staff meeting 12 |  |  |  | 99d → 98.5d | resources Carole Poland; Jun Cao; Hany Morcos → Carole Poland; Jun Cao; Hany Morcos; Dan Jump [50%] |
| 14 | Editorial staff meeting 13 |  |  |  | 94d → 93.5d | resources Carole Poland; Jun Cao; Hany Morcos → Carole Poland; Jun Cao; Hany Morcos; Dan Jump [50%] |
| 15 | **Acquisition** |  | 2023-05-19 17:00 → 2023-05-22 10:00 (+3d) | 30d → 30.25d | 7.25d → 0d |  |
| 17 | Content edit |  | 2023-05-03 17:00 → 2023-05-04 10:00 (+1d) |  | 7.25d → 0d |  |
| 18 | Author review of content edit | 2023-05-04 08:00 → 2023-05-04 10:00 | 2023-05-19 17:00 → 2023-05-22 10:00 (+3d) |  | 7.25d → 0d |  |
| 19 | Handoff to Editorial | 2023-05-19 17:00 → 2023-05-22 10:00 (+3d) | 2023-05-19 17:00 → 2023-05-22 10:00 (+3d) |  | 7.25d → 0d |  |
| 20 | **Editorial** | 2023-05-18 08:00 → 2023-05-22 10:00 (+4d) | 2023-06-28 17:00 → 2023-06-30 11:00 (+2d) | 30d → 29.12d | none → 0d |  |
| 21 | Organize manuscript for copyedit | 2023-05-18 08:00 → 2023-05-22 10:00 (+4d) | 2023-05-24 17:00 → 2023-05-29 11:00 (+5d) | 5d → 5.12d | 9.25d → 0d | resources Hany Morcos → Hany Morcos; Dan Jump [50%] |
| 22 | Copyedit | 2023-05-25 08:00 → 2023-05-29 11:00 (+4d) | 2023-06-09 10:00 → 2023-06-13 14:00 (+4d) |  | 9.25d → 0d |  |
| 23 | Author review of copyedit | 2023-06-09 10:00 → 2023-06-13 14:00 (+4d) | 2023-06-23 10:00 → 2023-06-27 14:00 (+4d) |  | 9.25d → 0d |  |
| 24 | Copyedit incorp | 2023-06-20 15:00 → 2023-06-23 09:00 (+3d) | 2023-06-27 15:00 → 2023-06-30 11:00 (+3d) | 5d → 5.12d | 9.25d → 0d | resources Carole Poland → Carole Poland; Dan Jump [50%] |
| 25 | Handoff to Production | 2023-06-27 15:00 → 2023-06-30 11:00 (+3d) | 2023-06-27 15:00 → 2023-06-30 11:00 (+3d) |  | 9.25d → 0d |  |
| 26 | **Design and Production** | 2023-06-29 08:00 → 2023-06-30 11:00 (+1d) | 2023-09-07 17:00 → 2023-09-13 14:00 (+6d) | 51d → 53.25d | 7d → 0d |  |
| 27 | Set pages | 2023-06-29 08:00 → 2023-06-30 11:00 (+1d) | 2023-07-19 17:00 → 2023-07-21 11:00 (+2d) |  | 8d → 0d |  |
| 28 | Interior illustration design | 2023-06-29 08:00 → 2023-06-30 11:00 (+1d) | 2023-07-19 17:00 → 2023-07-21 14:00 (+2d) | 15d → 15.25d | 8d → 0d |  |
| 29 | **1st Pages review** | 2023-07-21 08:00 → 2023-07-21 14:00 | 2023-08-24 17:00 → 2023-08-25 14:00 (+1d) |  | 7d → 0d |  |
| 30 | Proofread and index | 2023-07-21 08:00 → 2023-07-21 14:00 | 2023-08-03 17:00 → 2023-08-04 14:00 (+1d) |  | 7d → 0d |  |
| 31 | Incorporate 1st Pages review | 2023-08-04 08:00 → 2023-08-04 14:00 | 2023-08-10 17:00 → 2023-08-11 14:00 (+1d) |  | 7d → 0d | resources Hany Morcos → Hany Morcos; Dan Jump [50%] |
| 32 | Send proofed pages to Production | 2023-08-10 17:00 → 2023-08-11 14:00 (+1d) | 2023-08-10 17:00 → 2023-08-11 14:00 (+1d) |  | 7d → 0d |  |
| 33 | Enter page corrections and index | 2023-08-11 08:00 → 2023-08-11 14:00 | 2023-08-17 17:00 → 2023-08-18 14:00 (+1d) |  | 7d → 0d | resources Jane Dow → Jane Dow; Dan Jump [50%] |
| 34 | Cover design | 2023-08-18 08:00 → 2023-08-18 14:00 | 2023-08-24 17:00 → 2023-08-25 14:00 (+1d) |  | 7d → 0d |  |
| 35 | **2nd Pages review** | 2023-08-25 08:00 → 2023-08-25 14:00 | 2023-09-07 17:00 → 2023-09-13 14:00 (+6d) | 10d → 13d | 7d → 0d |  |
| 36 | Proof and review | 2023-08-25 08:00 → 2023-08-25 14:00 | 2023-08-31 17:00 → 2023-09-05 09:00 (+5d) | 5d → 6.5d | 7d → 0d |  |
| 37 | Send proofed pages to Production | 2023-08-31 17:00 → 2023-09-05 09:00 (+5d) | 2023-08-31 17:00 → 2023-09-05 09:00 (+5d) |  | 7d → 0d |  |
| 38 | Final review | 2023-09-01 08:00 → 2023-09-06 14:00 (+5d) | 2023-09-07 17:00 → 2023-09-13 14:00 (+6d) |  | 7d → 0d | resources Jane Dow; Hany Morcos [50%]; Carole Poland [50%] → Jane Dow; Hany Morcos [50%]; Carole Poland [50%]; Advance proofs [20 copies] |
| 39 | **Design book's companion website** | 2023-08-25 08:00 → 2023-08-25 14:00 | 2023-08-31 17:00 → 2023-09-08 14:00 (+8d) | 5d → 10d | 12d → 3d |  |
| 40 | Create mockup | 2023-08-25 08:00 → 2023-08-25 14:00 | 2023-08-29 17:00 → 2023-09-06 14:00 (+8d) | 3d → 4.5d | 12d → 3d |  |
| 41 | Review with author | 2023-08-30 08:00 → 2023-09-06 14:00 (+7d) | 2023-08-31 17:00 → 2023-09-08 14:00 (+8d) |  | 12d → 3d | resources Luis Sousa; Tad Orman → Luis Sousa; Tad Orman; Travel [0.1%]; Dan Jump [50%] |
| 42 | **Color prep and printing** | 2023-09-11 08:00 → 2023-09-13 14:00 (+2d) | 2023-11-17 17:00 → 2023-11-16 14:00 (-1d) | 50d → 46d | none → 0d |  |
| 43 | Send to color house | 2023-09-11 08:00 → 2023-09-13 14:00 (+2d) | 2023-09-11 17:00 → 2023-09-18 14:00 (+7d) |  | 4d → 0d |  |
| 44 | Generate proofs | 2023-09-12 08:00 → 2023-09-18 14:00 (+6d) | 2023-09-25 17:00 → 2023-10-02 14:00 (+7d) |  | 6d → 0d |  |
| 45 | Print and ship | 2023-09-29 08:00 → 2023-10-05 14:00 (+6d) | 2023-11-09 17:00 → 2023-11-16 14:00 (+7d) |  | 6d → 0d |  |
| 46 | **Book launch prep** | 2023-08-25 08:00 → 2023-09-08 14:00 (+14d) | 2023-09-18 17:00 → 2023-10-06 14:00 (+18d) | 17d → 20d | 44d → 29d |  |
| 47 | Launch planning | 2023-08-25 08:00 → 2023-09-08 14:00 (+14d) | 2023-08-31 17:00 → 2023-09-20 14:00 (+20d) | 5d → 8d | 44d → 29d |  |
| 48 | Assign launch team members | 2023-09-01 08:00 → 2023-09-20 14:00 (+19d) | 2023-09-01 17:00 → 2023-09-21 14:00 (+20d) |  | 44d → 29d |  |
| 49 | Complete author questionnaire | 2023-09-04 08:00 → 2023-09-21 14:00 (+17d) | 2023-09-08 17:00 → 2023-09-28 14:00 (+20d) |  | 44d → 29d | resources Hany Morcos; Tad Orman → Hany Morcos; Tad Orman; Travel [0.1%] |
| 50 | Schedule author interviews | 2023-09-11 08:00 → 2023-09-28 14:00 (+17d) | 2023-09-11 17:00 → 2023-09-29 14:00 (+18d) |  | 44d → 29d |  |
| 51 | Design and order marketing material | 2023-09-12 08:00 → 2023-09-29 14:00 (+17d) | 2023-09-18 17:00 → 2023-10-06 14:00 (+18d) |  | 44d → 29d |  |

## Version 8 (data date 2023-11-06, saved 2023-11-07, file ReportStatus_Gayathree.mpp)

Last finish 2023-11-16 → 2024-01-12 (+57d). Complete tasks 0 → 21.

Added:

| ID | Task | Duration | Start | Finish | Predecessors | Resources |
| --- | --- | --- | --- | --- | --- | --- |
| 18 | Original art review | 10.25d | 2023-05-01 10:00 A | 2023-05-15 12:00 A | 17FS-5d | Hany Morcos; Jane Dow |

Changed:

| ID | Task | Start | Finish | Duration | Complete | Total float | Predecessors | Other |
| --- | --- | --- | --- | --- | --- | --- | --- | --- |
| 1 | **Editorial staff meeting** | 2023-04-17 08:00 A |  |  | 0% → 54% | 93.5d → 134.88d |  | baseline start none → 2023-04-17 08:00; baseline finish none → 2023-07-10 09:00 |
| 2 | Editorial staff meeting 1 | 2023-04-17 08:00 A | 2023-04-17 09:00 A |  | 0% → 100% | 153.5d → none |  | baseline start none → 2023-04-17 08:00; baseline finish none → 2023-04-17 09:00 |
| 3 | Editorial staff meeting 2 | 2023-04-24 08:00 A | 2023-04-24 09:00 A |  | 0% → 100% | 148.5d → none |  | baseline start none → 2023-04-24 08:00; baseline finish none → 2023-04-24 09:00 |
| 4 | Editorial staff meeting 3 | 2023-05-01 08:00 A | 2023-05-01 09:00 A |  | 0% → 100% | 143.5d → none |  | baseline start none → 2023-05-01 08:00; baseline finish none → 2023-05-01 09:00 |
| 5 | Editorial staff meeting 4 | 2023-05-08 08:00 A | 2023-05-08 09:00 A |  | 0% → 100% | 138.5d → none |  | baseline start none → 2023-05-08 08:00; baseline finish none → 2023-05-08 09:00 |
| 6 | Editorial staff meeting 5 | 2023-05-15 08:00 A | 2023-05-15 09:00 A |  | 0% → 100% | 133.5d → none |  | baseline start none → 2023-05-15 08:00; baseline finish none → 2023-05-15 09:00 |
| 7 | Editorial staff meeting 6 | 2023-05-22 08:00 A | 2023-05-22 09:00 A |  | 0% → 100% | 128.5d → none |  | baseline start none → 2023-05-22 08:00; baseline finish none → 2023-05-22 09:00 |
| 8 | Editorial staff meeting 7 | 2023-05-29 08:00 A | 2023-05-29 09:00 A |  | 0% → 100% | 123.5d → none |  | baseline start none → 2023-05-29 08:00; baseline finish none → 2023-05-29 09:00 |
| 9 | Editorial staff meeting 8 |  |  |  |  | 118.5d → 159d |  | baseline start none → 2023-06-05 08:00; baseline finish none → 2023-06-05 09:00 |
| 10 | Editorial staff meeting 9 |  |  |  |  | 113.5d → 154d |  | baseline start none → 2023-06-12 08:00; baseline finish none → 2023-06-12 09:00 |
| 11 | Editorial staff meeting 10 |  |  |  |  | 108.5d → 149d |  | baseline start none → 2023-06-19 08:00; baseline finish none → 2023-06-19 09:00 |
| 12 | Editorial staff meeting 11 |  |  |  |  | 103.5d → 144d |  | baseline start none → 2023-06-26 08:00; baseline finish none → 2023-06-26 09:00 |
| 13 | Editorial staff meeting 12 |  |  |  |  | 98.5d → 139d |  | baseline start none → 2023-07-03 08:00; baseline finish none → 2023-07-03 09:00 |
| 14 | Editorial staff meeting 13 |  |  |  |  | 93.5d → 134d |  | baseline start none → 2023-07-10 08:00; baseline finish none → 2023-07-10 09:00 |
| 15 | **Acquisition** | 2023-04-10 08:00 A | 2023-05-22 10:00 → 2023-06-01 17:00 A (+10d) | 30.25d → 39d | 0% → 100% | 0d → none |  | baseline start none → 2023-04-10 08:00; baseline finish none → 2023-05-31 08:00 |
| 16 | Manuscript received | 2023-04-10 08:00 A | 2023-04-10 08:00 A |  | 0% → 100% | 0d → none |  | baseline start none → 2023-04-10 08:00; baseline finish none → 2023-04-10 08:00 |
| 17 | Content edit | 2023-04-10 08:00 → 2023-04-12 08:00 A (+2d) | 2023-05-04 10:00 → 2023-05-08 10:00 A (+4d) |  | 0% → 100% | 0d → none |  | baseline start none → 2023-04-10 08:00; baseline finish none → 2023-05-04 10:00 |
| 19 | Author review of content edit | 2023-05-04 10:00 → 2023-05-15 13:00 A (+11d) | 2023-05-22 10:00 → 2023-06-01 17:00 A (+10d) | 12d → 13.5d | 0% → 100% | 0d → none | 17 → 17, 18 | baseline start none → 2023-05-11 13:00; baseline finish none → 2023-05-30 17:00 |
| 20 | Handoff to Editorial | 2023-05-22 10:00 → 2023-06-01 17:00 A (+10d) | 2023-05-22 10:00 → 2023-06-01 17:00 A (+10d) |  | 0% → 100% | 0d → none |  | baseline start none → 2023-05-31 08:00; baseline finish none → 2023-05-31 08:00 |
| 21 | **Editorial** | 2023-05-22 10:00 → 2023-06-02 08:00 A (+11d) | 2023-06-30 11:00 → 2023-07-12 12:00 A (+12d) | 29.12d → 28.5d | 0% → 100% | 0d → none |  | baseline start none → 2023-05-31 08:00; baseline finish none → 2023-07-10 13:00 |
| 22 | Organize manuscript for copyedit | 2023-05-22 10:00 → 2023-06-02 08:00 A (+11d) | 2023-05-29 11:00 → 2023-06-08 17:00 A (+10d) | 5.12d → 5d | 0% → 100% | 0d → none |  | baseline start none → 2023-05-31 08:00; baseline finish none → 2023-06-06 17:00 |
| 23 | Copyedit | 2023-05-29 11:00 → 2023-06-09 08:00 A (+11d) | 2023-06-13 14:00 → 2023-06-23 15:00 A (+10d) | 11.25d → 10.75d | 0% → 100% | 0d → none |  | baseline start none → 2023-06-07 08:00; baseline finish none → 2023-06-21 15:00 |
| 24 | Author review of copyedit | 2023-06-13 14:00 → 2023-06-23 15:00 A (+10d) | 2023-06-27 14:00 → 2023-07-07 15:00 A (+10d) |  | 0% → 100% | 0d → none |  | baseline start none → 2023-06-21 15:00; baseline finish none → 2023-07-05 15:00 |
| 25 | Copyedit incorp | 2023-06-23 09:00 → 2023-07-05 10:00 A (+12d) | 2023-06-30 11:00 → 2023-07-12 12:00 A (+12d) |  | 0% → 100% | 0d → none |  | baseline start none → 2023-07-03 10:00; baseline finish none → 2023-07-10 12:00 |
| 26 | Handoff to Production | 2023-06-30 11:00 → 2023-07-12 12:00 A (+12d) | 2023-06-30 11:00 → 2023-07-12 12:00 A (+12d) |  | 0% → 100% | 0d → none |  | baseline start none → 2023-07-10 13:00; baseline finish none → 2023-07-10 13:00 |
| 27 | **Design and Production** | 2023-06-30 11:00 → 2023-07-12 13:00 A (+12d) | 2023-09-13 14:00 → 2023-11-13 17:00 (+61d) | 53.25d → 88.5d | 0% → 69% |  |  | baseline start none → 2023-07-10 13:00; baseline finish none → 2023-10-13 17:00 |
| 28 | Set pages | 2023-06-30 11:00 → 2023-07-12 13:00 A (+12d) | 2023-07-21 11:00 → 2023-08-02 12:00 A (+12d) |  | 0% → 100% | 0d → none |  | baseline start none → 2023-07-10 13:00; baseline finish none → 2023-07-31 12:00 |
| 29 | Interior illustration design | 2023-06-30 11:00 → 2023-07-12 13:00 A (+12d) | 2023-07-21 14:00 → 2023-08-04 17:00 A (+14d) | 15.25d → 17.5d | 0% → 100% | 0d → none |  | baseline start none → 2023-07-10 13:00; baseline finish none → 2023-08-02 17:00 |
| 30 | **1st Pages review** | 2023-07-21 14:00 → 2023-08-07 08:00 A (+17d) | 2023-08-25 14:00 → 2023-10-23 17:00 (+59d) | 25d → 56d | 0% → 80% |  |  | baseline start none → 2023-08-03 08:00; baseline finish none → 2023-10-13 17:00 |
| 31 | Proofread and index | 2023-07-21 14:00 → 2023-08-07 08:00 A (+17d) | 2023-08-04 14:00 → 2023-09-05 17:00 A (+32d) | 10d → 20d | 0% → 100% | 0d → none |  | baseline start none → 2023-08-03 08:00; baseline finish none → 2023-09-01 17:00 |
| 32 | Incorporate 1st Pages review | 2023-08-04 14:00 → 2023-09-06 08:00 A (+33d) | 2023-08-11 14:00 → 2023-10-02 17:00 A (+52d) | 5d → 19d | 0% → 100% | 0d → none |  | baseline start none → 2023-09-05 08:00; baseline finish none → 2023-09-29 17:00 |
| 33 | Send proofed pages to Production | 2023-08-11 14:00 → 2023-10-02 17:00 (+52d) | 2023-08-11 14:00 → 2023-10-02 17:00 (+52d) |  |  | 0d → 5d |  | baseline start none → 2023-09-29 17:00; baseline finish none → 2023-09-29 17:00 |
| 34 | Enter page corrections and index | 2023-08-11 14:00 → 2023-10-10 08:00 (+60d) | 2023-08-18 14:00 → 2023-10-16 17:00 (+59d) |  |  |  |  | constraint none → start no earlier than 2023-10-10 08:00; baseline start none → 2023-10-02 08:00; baseline finish none → 2023-10-06 17:00 |
| 35 | Cover design | 2023-08-18 14:00 → 2023-10-17 08:00 (+60d) | 2023-08-25 14:00 → 2023-10-23 17:00 (+59d) |  |  |  |  | baseline start none → 2023-10-09 08:00; baseline finish none → 2023-10-13 17:00 |
| 36 | **2nd Pages review** | 2023-08-25 14:00 → 2023-10-24 08:00 (+60d) | 2023-09-13 14:00 → 2023-11-13 17:00 (+61d) | 13d → 15d |  |  |  |  |
| 37 | Proof and review | 2023-08-25 14:00 → 2023-10-24 08:00 (+60d) | 2023-09-05 09:00 → 2023-11-06 17:00 (+62d) | 6.5d → 10d |  |  |  |  |
| 38 | Send proofed pages to Production | 2023-09-05 09:00 → 2023-11-06 17:00 (+62d) | 2023-09-05 09:00 → 2023-11-06 17:00 (+62d) |  |  |  |  |  |
| 39 | Final review | 2023-09-06 14:00 → 2023-11-07 08:00 (+62d) | 2023-09-13 14:00 → 2023-11-13 17:00 (+61d) |  |  |  |  |  |
| 40 | **Design book's companion website** | 2023-08-25 14:00 → 2023-10-24 08:00 (+60d) | 2023-09-08 14:00 → 2023-11-06 17:00 (+59d) |  |  | 3d → 5d |  |  |
| 41 | Create mockup | 2023-08-25 14:00 → 2023-10-24 08:00 (+60d) | 2023-09-06 14:00 → 2023-11-02 17:00 (+57d) |  |  | 3d → 5d |  |  |
| 42 | Review with author | 2023-09-06 14:00 → 2023-11-03 08:00 (+58d) | 2023-09-08 14:00 → 2023-11-06 17:00 (+59d) |  |  | 3d → 5d |  |  |
| 43 | **Color prep and printing** | 2023-09-13 14:00 → 2023-11-14 08:00 (+62d) | 2023-11-16 14:00 → 2024-01-12 17:00 (+57d) | 46d → 44d |  |  |  |  |
| 44 | Send to color house | 2023-09-13 14:00 → 2023-11-14 08:00 (+62d) | 2023-09-18 14:00 → 2023-11-14 17:00 (+57d) |  |  |  |  |  |
| 45 | Generate proofs | 2023-09-18 14:00 → 2023-11-15 08:00 (+58d) | 2023-10-02 14:00 → 2023-11-28 17:00 (+57d) |  |  |  |  |  |
| 46 | Print and ship | 2023-10-05 14:00 → 2023-12-04 08:00 (+60d) | 2023-11-16 14:00 → 2024-01-12 17:00 (+57d) |  |  |  |  |  |
| 47 | **Book launch prep** | 2023-09-08 14:00 → 2023-11-15 08:00 (+68d) | 2023-10-06 14:00 → 2023-12-14 17:00 (+69d) | 20d → 22d |  | 29d → 21d |  |  |
| 48 | Launch planning | 2023-09-08 14:00 → 2023-11-15 08:00 (+68d) | 2023-09-20 14:00 → 2023-11-21 17:00 (+62d) | 8d → 5d |  | 29d → 21d | 40 → 44 |  |
| 49 | Assign launch team members | 2023-09-20 14:00 → 2023-11-22 08:00 (+63d) | 2023-09-21 14:00 → 2023-11-22 17:00 (+62d) |  |  | 29d → 21d |  |  |
| 50 | Complete author questionnaire | 2023-09-21 14:00 → 2023-11-23 08:00 (+63d) | 2023-09-28 14:00 → 2023-11-29 17:00 (+62d) |  |  | 29d → 21d |  |  |
| 51 | Schedule author interviews | 2023-09-28 14:00 → 2023-11-30 08:00 (+63d) | 2023-09-29 14:00 → 2023-11-30 17:00 (+62d) |  |  | 29d → 21d |  |  |
| 52 | Design and order marketing material | 2023-09-29 14:00 → 2023-12-01 08:00 (+63d) | 2023-10-06 14:00 → 2023-12-14 17:00 (+69d) | 5d → 10d |  | 29d → 21d |  |  |

## Version 9 (saved 2023-11-28, file Gayathree_CustomizeProjectA.mpp)

Last finish 2024-01-12 → 2023-12-07 (-36d). Complete tasks 21 → 12.

Changed:

| ID | Task | Start | Finish | Duration | Complete | Total float | Other |
| --- | --- | --- | --- | --- | --- | --- | --- |
| 1 | **Editorial staff meeting** |  |  |  |  | 134.88d → 108.88d | baseline start 2023-04-17 08:00 → 2018-04-16 08:00; baseline finish 2023-07-10 09:00 → 2018-07-09 09:00 |
| 2 | Editorial staff meeting 1 |  |  |  |  |  | baseline start 2023-04-17 08:00 → 2018-04-16 08:00; baseline finish 2023-04-17 09:00 → 2018-04-16 09:00 |
| 3 | Editorial staff meeting 2 |  |  |  |  |  | baseline start 2023-04-24 08:00 → 2018-04-23 08:00; baseline finish 2023-04-24 09:00 → 2018-04-23 09:00 |
| 4 | Editorial staff meeting 3 |  |  |  |  |  | baseline start 2023-05-01 08:00 → 2018-04-30 08:00; baseline finish 2023-05-01 09:00 → 2018-04-30 09:00 |
| 5 | Editorial staff meeting 4 |  |  |  |  |  | baseline start 2023-05-08 08:00 → 2018-05-07 08:00; baseline finish 2023-05-08 09:00 → 2018-05-07 09:00 |
| 6 | Editorial staff meeting 5 |  |  |  |  |  | baseline start 2023-05-15 08:00 → 2018-05-14 08:00; baseline finish 2023-05-15 09:00 → 2018-05-14 09:00 |
| 7 | Editorial staff meeting 6 |  |  |  |  |  | baseline start 2023-05-22 08:00 → 2018-05-21 08:00; baseline finish 2023-05-22 09:00 → 2018-05-21 09:00 |
| 8 | Editorial staff meeting 7 |  |  |  |  |  | baseline start 2023-05-29 08:00 → 2018-05-28 08:00; baseline finish 2023-05-29 09:00 → 2018-05-28 09:00 |
| 9 | Editorial staff meeting 8 |  |  |  |  | 159d → 133.88d | baseline start 2023-06-05 08:00 → 2018-06-04 08:00; baseline finish 2023-06-05 09:00 → 2018-06-04 09:00 |
| 10 | Editorial staff meeting 9 |  |  |  |  | 154d → 128.88d | baseline start 2023-06-12 08:00 → 2018-06-11 08:00; baseline finish 2023-06-12 09:00 → 2018-06-11 09:00 |
| 11 | Editorial staff meeting 10 |  |  |  |  | 149d → 123.88d | baseline start 2023-06-19 08:00 → 2018-06-18 08:00; baseline finish 2023-06-19 09:00 → 2018-06-18 09:00 |
| 12 | Editorial staff meeting 11 |  |  |  |  | 144d → 118.88d | baseline start 2023-06-26 08:00 → 2018-06-25 08:00; baseline finish 2023-06-26 09:00 → 2018-06-25 09:00 |
| 13 | Editorial staff meeting 12 |  |  |  |  | 139d → 113.88d | baseline start 2023-07-03 08:00 → 2018-07-02 08:00; baseline finish 2023-07-03 09:00 → 2018-07-02 09:00 |
| 14 | Editorial staff meeting 13 |  |  |  |  | 134d → 108.88d | baseline start 2023-07-10 08:00 → 2018-07-09 08:00; baseline finish 2023-07-10 09:00 → 2018-07-09 09:00 |
| 15 | **Acquisition** |  | 2023-06-01 17:00 A → 2023-05-30 08:00 A (-2d) | 39d → 36d |  |  | baseline start 2023-04-10 08:00 → 2018-04-09 08:00; baseline finish 2023-05-31 08:00 → 2018-05-28 12:00 |
| 16 | Manuscript received |  |  |  |  |  | baseline start 2023-04-10 08:00 → 2018-04-09 08:00; baseline finish 2023-04-10 08:00 → 2018-04-09 08:00 |
| 17 | Content edit | 2023-04-12 08:00 A → 2023-04-10 08:00 A (-2d) | 2023-05-08 10:00 A → 2023-05-04 10:00 A (-4d) |  |  |  | baseline start 2023-04-10 08:00 → 2018-04-09 08:00; baseline finish 2023-05-04 10:00 → 2018-05-03 10:00 |
| 18 | Original art review | 2023-05-01 10:00 A → 2023-04-26 10:00 A (-5d) | 2023-05-15 12:00 A → 2023-05-10 12:00 A (-5d) |  |  |  | baseline start 2023-04-27 10:00 → 2018-04-26 10:00; baseline finish 2023-05-11 12:00 → 2018-05-10 12:00 |
| 19 | Author review of content edit | 2023-05-15 13:00 A → 2023-05-10 13:00 A (-5d) | 2023-06-01 17:00 A → 2023-05-29 17:00 A (-3d) |  |  |  | baseline start 2023-05-11 13:00 → 2018-05-10 13:00; baseline finish 2023-05-30 17:00 → 2018-05-28 12:00 |
| 20 | Handoff to Editorial | 2023-06-01 17:00 A → 2023-05-30 08:00 A (-2d) | 2023-06-01 17:00 A → 2023-05-30 08:00 A (-2d) |  |  |  | baseline start 2023-05-31 08:00 → 2018-05-28 12:00; baseline finish 2023-05-31 08:00 → 2018-05-28 12:00 |
| 21 | **Editorial** | 2023-06-02 08:00 A → 2023-05-30 08:00 (-3d) | 2023-07-12 12:00 A → 2023-07-07 12:00 (-5d) |  | 100% → 0% | none → 2.5d | baseline start 2023-05-31 08:00 → 2018-05-28 13:00; baseline finish 2023-07-10 13:00 → 2018-07-06 14:00 |
| 22 | Organize manuscript for copyedit | 2023-06-02 08:00 A → 2023-05-30 08:00 (-3d) | 2023-06-08 17:00 A → 2023-06-05 17:00 (-3d) |  | 100% → 0% | none → 2.5d | baseline start 2023-05-31 08:00 → 2018-05-28 13:00; baseline finish 2023-06-06 17:00 → 2018-06-04 14:00 |
| 23 | Copyedit | 2023-06-09 08:00 A → 2023-06-06 08:00 (-3d) | 2023-06-23 15:00 A → 2023-06-20 15:00 (-3d) |  | 100% → 0% | none → 2.5d | baseline start 2023-06-07 08:00 → 2018-06-04 14:00; baseline finish 2023-06-21 15:00 → 2018-06-19 16:00 |
| 24 | Author review of copyedit | 2023-06-23 15:00 A → 2023-06-20 15:00 (-3d) | 2023-07-07 15:00 A → 2023-07-04 15:00 (-3d) |  | 100% → 0% | none → 2.5d | baseline start 2023-06-21 15:00 → 2018-06-19 16:00; baseline finish 2023-07-05 15:00 → 2018-07-03 16:00 |
| 25 | Copyedit incorp | 2023-07-05 10:00 A → 2023-06-30 10:00 (-5d) | 2023-07-12 12:00 A → 2023-07-07 12:00 (-5d) |  | 100% → 0% | none → 2.5d | baseline start 2023-07-03 10:00 → 2018-06-29 11:00; baseline finish 2023-07-10 12:00 → 2018-07-06 14:00 |
| 26 | Handoff to Production | 2023-07-12 12:00 A → 2023-07-07 12:00 (-5d) | 2023-07-12 12:00 A → 2023-07-07 12:00 (-5d) |  | 100% → 0% | none → 2.5d | baseline start 2023-07-10 13:00 → 2018-07-06 14:00; baseline finish 2023-07-10 13:00 → 2018-07-06 14:00 |
| 27 | **Design and Production** | 2023-07-12 13:00 A → 2023-07-07 13:00 (-5d) | 2023-11-13 17:00 → 2023-10-05 17:00 (-39d) | 88.5d → 64.5d | 69% → 0% | 0d → 1d | baseline start 2023-07-10 13:00 → 2018-07-06 14:00; baseline finish 2023-10-13 17:00 → 2018-09-26 16:00 |
| 28 | Set pages | 2023-07-12 13:00 A → 2023-07-07 13:00 (-5d) | 2023-08-02 12:00 A → 2023-07-28 12:00 (-5d) |  | 100% → 0% | none → 2.5d | baseline start 2023-07-10 13:00 → 2018-07-06 14:00; baseline finish 2023-07-31 12:00 → 2018-07-27 14:00 |
| 29 | Interior illustration design | 2023-07-12 13:00 A → 2023-07-07 13:00 (-5d) | 2023-08-04 17:00 A → 2023-08-01 17:00 (-3d) |  | 100% → 0% | none → 2.5d | baseline start 2023-07-10 13:00 → 2018-07-06 14:00; baseline finish 2023-08-02 17:00 → 2018-07-27 16:00 |
| 30 | **1st Pages review** | 2023-08-07 08:00 A → 2023-08-02 08:00 (-5d) | 2023-10-23 17:00 → 2023-09-18 17:00 (-35d) | 56d → 34d | 80% → 0% | 0d → 2.5d | baseline start 2023-08-03 08:00 → 2018-07-27 16:00; baseline finish 2023-10-13 17:00 → 2018-09-07 16:00 |
| 31 | Proofread and index | 2023-08-07 08:00 A → 2023-08-02 08:00 (-5d) | 2023-09-05 17:00 A → 2023-08-21 17:00 (-15d) | 20d → 14d | 100% → 0% | none → 2.5d | constraint start no earlier than 2023-07-21 08:00 → start no earlier than 2023-07-20 08:00; baseline start 2023-08-03 08:00 → 2018-07-27 16:00; baseline finish 2023-09-01 17:00 → 2018-08-10 16:00 |
| 32 | Incorporate 1st Pages review | 2023-09-06 08:00 A → 2023-08-22 08:00 (-15d) | 2023-10-02 17:00 A → 2023-09-04 17:00 (-28d) | 19d → 10d | 100% → 0% | none → 2.5d | resources Hany Morcos; Dan Jump [50%] → Hany Morcos; Dan Jump [50%]; Jane Dow; baseline start 2023-09-05 08:00 → 2018-08-10 16:00; baseline finish 2023-09-29 17:00 → 2018-08-24 16:00 |
| 33 | Send proofed pages to Production | 2023-10-02 17:00 → 2023-09-04 17:00 (-28d) | 2023-10-02 17:00 → 2023-09-04 17:00 (-28d) |  |  | 5d → 2.5d | baseline start 2023-09-29 17:00 → 2018-08-24 16:00; baseline finish 2023-09-29 17:00 → 2018-08-24 16:00 |
| 34 | Enter page corrections and index | 2023-10-10 08:00 → 2023-09-05 08:00 (-35d) | 2023-10-16 17:00 → 2023-09-11 17:00 (-35d) |  |  | 0d → 2.5d | constraint start no earlier than 2023-10-10 08:00 → none; baseline start 2023-10-02 08:00 → 2018-08-24 16:00; baseline finish 2023-10-06 17:00 → 2018-08-31 16:00 |
| 35 | Cover design | 2023-10-17 08:00 → 2023-09-12 08:00 (-35d) | 2023-10-23 17:00 → 2023-09-18 17:00 (-35d) |  |  | 0d → 2.5d | baseline start 2023-10-09 08:00 → 2018-08-31 16:00; baseline finish 2023-10-13 17:00 → 2018-09-07 16:00 |
| 36 | **2nd Pages review** | 2023-10-24 08:00 → 2023-09-19 08:00 (-35d) | 2023-11-13 17:00 → 2023-10-05 17:00 (-39d) | 15d → 13d |  | 0d → 1d | baseline start none → 2018-09-07 16:00; baseline finish none → 2018-09-26 16:00 |
| 37 | Proof and review | 2023-10-24 08:00 → 2023-09-19 08:00 (-35d) | 2023-11-06 17:00 → 2023-09-27 12:00 (-40d) | 10d → 6.5d |  | 0d → 2.5d | baseline start none → 2018-09-07 16:00; baseline finish none → 2018-09-18 11:00 |
| 38 | Send proofed pages to Production | 2023-11-06 17:00 → 2023-09-27 12:00 (-40d) | 2023-11-06 17:00 → 2023-09-27 12:00 (-40d) |  |  | 0d → 2.5d | baseline start none → 2018-09-18 11:00; baseline finish none → 2018-09-18 11:00 |
| 39 | Final review | 2023-11-07 08:00 → 2023-09-29 08:00 (-39d) | 2023-11-13 17:00 → 2023-10-05 17:00 (-39d) |  |  | 0d → 1d | baseline start none → 2018-09-19 16:00; baseline finish none → 2018-09-26 16:00 |
| 40 | **Design book's companion website** | 2023-10-24 08:00 → 2023-09-19 08:00 (-35d) | 2023-11-06 17:00 → 2023-10-02 17:00 (-35d) |  |  | 5d → 4d | baseline start none → 2018-09-07 16:00; baseline finish none → 2018-09-21 16:00 |
| 41 | Create mockup | 2023-10-24 08:00 → 2023-09-19 08:00 (-35d) | 2023-11-02 17:00 → 2023-09-28 17:00 (-35d) |  |  | 5d → 4d | baseline start none → 2018-09-07 16:00; baseline finish none → 2018-09-19 16:00 |
| 42 | Review with author | 2023-11-03 08:00 → 2023-09-29 08:00 (-35d) | 2023-11-06 17:00 → 2023-10-02 17:00 (-35d) |  |  | 5d → 4d | baseline start none → 2018-09-19 16:00; baseline finish none → 2018-09-21 16:00 |
| 43 | **Color prep and printing** | 2023-11-14 08:00 → 2023-10-09 08:00 (-36d) | 2024-01-12 17:00 → 2023-12-07 17:00 (-36d) |  |  |  | baseline start none → 2018-09-26 16:00; baseline finish none → 2018-11-29 16:00 |
| 44 | Send to color house | 2023-11-14 08:00 → 2023-10-09 08:00 (-36d) | 2023-11-14 17:00 → 2023-10-09 17:00 (-36d) |  |  |  | baseline start none → 2018-09-26 16:00; baseline finish none → 2018-10-01 16:00 |
| 45 | Generate proofs | 2023-11-15 08:00 → 2023-10-10 08:00 (-36d) | 2023-11-28 17:00 → 2023-10-23 17:00 (-36d) |  |  |  | baseline start none → 2018-10-01 16:00; baseline finish none → 2018-10-15 16:00 |
| 46 | Print and ship | 2023-12-04 08:00 → 2023-10-27 08:00 (-38d) | 2024-01-12 17:00 → 2023-12-07 17:00 (-36d) |  |  |  | baseline start none → 2018-10-18 16:00; baseline finish none → 2018-11-29 16:00 |
| 47 | **Book launch prep** | 2023-11-15 08:00 → 2023-10-10 08:00 (-36d) | 2023-12-14 17:00 → 2023-11-08 17:00 (-36d) |  |  |  | baseline start none → 2018-10-01 16:00; baseline finish none → 2018-10-31 16:00 |
| 48 | Launch planning | 2023-11-15 08:00 → 2023-10-10 08:00 (-36d) | 2023-11-21 17:00 → 2023-10-16 17:00 (-36d) |  |  |  | baseline start none → 2018-10-01 16:00; baseline finish none → 2018-10-08 16:00 |
| 49 | Assign launch team members | 2023-11-22 08:00 → 2023-10-17 08:00 (-36d) | 2023-11-22 17:00 → 2023-10-17 17:00 (-36d) |  |  |  | baseline start none → 2018-10-08 16:00; baseline finish none → 2018-10-09 16:00 |
| 50 | Complete author questionnaire | 2023-11-23 08:00 → 2023-10-18 08:00 (-36d) | 2023-11-29 17:00 → 2023-10-24 17:00 (-36d) |  |  |  | baseline start none → 2018-10-09 16:00; baseline finish none → 2018-10-16 16:00 |
| 51 | Schedule author interviews | 2023-11-30 08:00 → 2023-10-25 08:00 (-36d) | 2023-11-30 17:00 → 2023-10-25 17:00 (-36d) |  |  |  | baseline start none → 2018-10-16 16:00; baseline finish none → 2018-10-17 16:00 |
| 52 | Design and order marketing material | 2023-12-01 08:00 → 2023-10-26 08:00 (-36d) | 2023-12-14 17:00 → 2023-11-08 17:00 (-36d) |  |  |  | baseline start none → 2018-10-17 16:00; baseline finish none → 2018-10-31 16:00 |
