# Children's Gourmet Cookbook

How a schedule from MS Project changed from version to version. A marks actual dates.

## Version 1 (data date 2023-06-05, saved 2023-09-26, file Gayathree_FormatInDepth.mpp)

| ID | WBS | Task | Duration | Start | Finish | Predecessors | Total float | Constraint |
| --- | --- | --- | --- | --- | --- | --- | --- | --- |
| 1 | 1 | **Acquisition** | 33d | 2023-07-17 | 2023-08-30 |  | 0d |  |
| 2 |  | Manuscript received | 0d | 2023-07-17 | 2023-07-17 |  | 2d |  |
| 3 |  | Content edit | 29d | 2023-07-19 | 2023-08-30 | 2 | 0d | start no earlier than 2023-07-19 |
| 4 |  | Handoff to Editorial | 0d | 2023-08-30 | 2023-08-30 | 3 | 0d |  |
| 5 | 2 | **Editorial** | 30d | 2023-08-31 | 2023-10-11 | 1 | 0d |  |
| 6 |  | Organize manuscript for copyedit | 5d | 2023-08-31 | 2023-09-06 |  | 0d |  |
| 7 |  | Copyedit | 20d | 2023-09-07 | 2023-10-04 | 6 | 0d |  |
| 8 |  | Copyedit incorp | 5d | 2023-10-05 | 2023-10-11 | 7 | 0d |  |
| 9 |  | Handoff to Production | 0d | 2023-10-11 | 2023-10-11 | 8 | 0d |  |
| 10 | 3 | **Design and Production** | 20d | 2023-08-31 | 2023-09-27 | 5SS | 10d |  |
| 11 |  | Cover design | 5d | 2023-08-31 | 2023-09-06 |  | 10d |  |
| 12 |  | Set pages | 10d | 2023-09-07 | 2023-09-20 | 11 | 10d |  |
| 13 |  | Interior illustration design | 15d | 2023-09-07 | 2023-09-27 | 12SS | 10d |  |
| 14 | 4 | **Pages review** | 20d | 2023-10-12 | 2023-11-08 | 10, 5 | 0d |  |
| 15 |  | Proofread and index | 10d | 2023-10-12 | 2023-10-25 |  | 0d |  |
| 16 |  | Incorporate 1st Pages review | 5d | 2023-10-26 | 2023-11-01 | 15 | 0d |  |
| 17 |  | Send proofed pages to Production | 0d | 2023-11-01 | 2023-11-01 | 16 | 0d |  |
| 18 |  | Enter page corrections and index | 5d | 2023-11-02 | 2023-11-08 | 17 | 0d |  |
| 19 |  | Send to print service | 0d | 2023-11-08 | 2023-11-08 | 18 | 0d |  |

## Version 2 (data date 2023-09-14, saved 2023-11-28, file Gayathree_CustomizeProjectB.mpp)

Last finish 2023-11-08 → 2023-11-06 (-2d). Complete tasks 0 → 3.

Changed:

| ID | Task | Start | Finish | Duration | Complete | Total float | Other |
| --- | --- | --- | --- | --- | --- | --- | --- |
| 1 | **Acquisition** | 2023-07-17 A | 2023-08-30 → 2023-08-28 A (-2d) | 33d → 31d | 0% → 100% | 0d → none | baseline start 2023-07-16 → 2018-07-16; baseline finish 2023-08-17 → 2018-08-21 |
| 2 | Manuscript received | 2023-07-17 A | 2023-07-17 A |  | 0% → 100% | 2d → none | baseline start 2023-07-16 → 2018-07-16; baseline finish 2023-07-16 → 2018-07-16 |
| 3 | Content edit | 2023-07-19 → 2023-07-17 A (-2d) | 2023-08-30 → 2023-08-28 A (-2d) |  | 0% → 100% | 0d → none | constraint start no earlier than 2023-07-19 → none; baseline start 2023-07-16 → 2018-07-16; baseline finish 2023-08-17 → 2018-08-21 |
| 4 | Handoff to Editorial | 2023-08-30 → 2023-08-28 A (-2d) | 2023-08-30 → 2023-08-28 A (-2d) |  | 0% → 100% | 0d → none | baseline start 2023-08-17 → 2018-08-21; baseline finish 2023-08-17 → 2018-08-21 |
| 5 | **Editorial** | 2023-08-31 → 2023-08-29 (-2d) | 2023-10-11 → 2023-10-09 (-2d) |  |  |  | baseline start 2023-08-20 → 2018-08-22; baseline finish 2023-09-28 → 2018-10-02 |
| 6 | Organize manuscript for copyedit | 2023-08-31 → 2023-08-29 (-2d) | 2023-09-06 → 2023-09-04 (-2d) |  |  |  | baseline start 2023-08-17 → 2018-08-22; baseline finish 2023-08-24 → 2018-08-28 |
| 7 | Copyedit | 2023-09-07 → 2023-09-05 (-2d) | 2023-10-04 → 2023-10-02 (-2d) |  |  |  | baseline start 2023-08-27 → 2018-08-29; baseline finish 2018-09-21 → 2018-09-25 |
| 8 | Copyedit incorp | 2023-10-05 → 2023-10-03 (-2d) | 2023-10-11 → 2023-10-09 (-2d) |  |  |  | baseline start 2023-09-24 → 2018-09-26; baseline finish 2018-09-28 → 2018-10-02 |
| 9 | Handoff to Production | 2023-10-11 → 2023-10-09 (-2d) | 2023-10-11 → 2023-10-09 (-2d) |  |  |  | baseline start 2023-09-28 → 2018-10-02; baseline finish 2018-09-28 → 2018-10-02 |
| 10 | **Design and Production** | 2023-08-31 → 2023-08-29 (-2d) | 2023-09-27 → 2023-09-25 (-2d) |  |  |  | baseline start 2023-08-20 → 2018-08-22; baseline finish 2023-09-14 → 2018-09-18 |
| 11 | Cover design | 2023-08-31 → 2023-08-29 (-2d) | 2023-09-06 → 2023-09-04 (-2d) |  |  |  | baseline start 2023-08-27 → 2018-08-22; baseline finish 2023-08-24 → 2018-08-28 |
| 12 | Set pages | 2023-09-07 → 2023-09-05 (-2d) | 2023-09-20 → 2023-09-18 (-2d) |  |  |  | baseline start 2023-08-27 → 2018-08-29; baseline finish 2023-09-07 → 2018-09-11 |
| 13 | Interior illustration design | 2023-09-07 → 2023-09-05 (-2d) | 2023-09-27 → 2023-09-25 (-2d) |  |  |  | baseline start 2023-08-27 → 2018-08-29; baseline finish 2023-09-14 → 2018-09-18 |
| 14 | **Pages review** | 2023-10-12 → 2023-10-10 (-2d) | 2023-11-08 → 2023-11-06 (-2d) |  |  |  | baseline start 2023-10-01 → 2018-10-03; baseline finish 2023-10-26 → 2018-10-30 |
| 15 | Proofread and index | 2023-10-12 → 2023-10-10 (-2d) | 2023-10-25 → 2023-10-23 (-2d) |  |  |  | baseline start 2023-10-01 → 2018-10-03; baseline finish 2023-10-12 → 2018-10-16 |
| 16 | Incorporate 1st Pages review | 2023-10-26 → 2023-10-24 (-2d) | 2023-11-01 → 2023-10-30 (-2d) |  |  |  | baseline start 2023-10-15 → 2018-10-17; baseline finish 2023-10-19 → 2018-10-23 |
| 17 | Send proofed pages to Production | 2023-11-01 → 2023-10-30 (-2d) | 2023-11-01 → 2023-10-30 (-2d) |  |  |  | baseline start 2023-10-19 → 2018-10-23; baseline finish 2023-10-19 → 2018-10-23 |
| 18 | Enter page corrections and index | 2023-11-02 → 2023-10-31 (-2d) | 2023-11-08 → 2023-11-06 (-2d) |  |  |  | baseline start 2023-10-22 → 2018-10-24; baseline finish 2023-10-26 → 2018-10-30 |
| 19 | Send to print service | 2023-11-08 → 2023-11-06 (-2d) | 2023-11-08 → 2023-11-06 (-2d) |  |  |  | baseline start 2023-10-26 → 2018-10-30; baseline finish 2023-10-26 → 2018-10-30 |
