# New book launch

How a schedule from MS Project changed from version to version. A marks actual dates.

## Version 1 (saved 2023-09-19, file Gayathree_SimpleAssignWorkResource.mpp)

| ID | WBS | Task | Duration | Start | Finish | Predecessors | Total float |
| --- | --- | --- | --- | --- | --- | --- | --- |
| 1 | 1 | **Planning Phase** | 11d | 2023-01-09 | 2023-01-23 |  | 0d |
| 2 |  | Assign launch team members | 1d | 2023-01-09 | 2023-01-09 |  | 0d |
| 3 |  | Complete author questionnaire | 1w | 2023-01-10 | 2023-01-16 | 2 | 5d |
| 4 |  | Schedule author interviews | 1w | 2023-01-09 | 2023-01-16 | 2 | 5d |
| 5 |  | Design and order marketing material | 2w | 2023-01-10 | 2023-01-23 | 2 | 0d |
| 6 |  | Planning complete! | 0d | 2023-01-23 | 2023-01-23 | 5 | 0d |
| 7 | 2 | **Internal Launch Phase** | 18d | 2023-01-24 | 2023-02-17 | 1 | 0d |
| 8 |  | Kickoff book launch meeting | 1d | 2023-01-24 | 2023-01-24 |  | 0d |
| 9 |  | Plan author's travel itinerary | 3d | 2023-01-26 | 2023-01-30 | 8 | 14d |
| 10 |  | Channel Sales prep | 2w | 2023-01-26 | 2023-02-08 | 8 | 0d |
| 11 |  | Complete book launch form | 2d | 2023-02-09 | 2023-02-10 | 10 | 5d |
| 12 |  | Prepare book sales kit | 1w | 2023-02-09 | 2023-02-15 | 8, 10 | 0d |
| 13 |  | Distribute internal marketing material | 2d | 2023-02-16 | 2023-02-17 | 12 | 0d |
| 14 | 3 | **Public Launch Phase** | 12d | 2023-02-20 | 2023-03-07 | 7 | 0d |
| 15 | 3.1 | **Author travel and appearances** | 2d | 2023-02-20 | 2023-02-21 |  | 10d |
| 16 |  | Author radio interview | 1d | 2023-02-20 | 2023-02-20 |  | 10d |
| 17 |  | Author reading and signing at book fair | 1d | 2023-02-21 | 2023-02-21 | 16 | 10d |
| 18 |  | Distribute advance copies | 2d | 2023-02-20 | 2023-02-21 |  | 10d |
| 19 |  | Distribute book sales kit | 2d | 2023-02-20 | 2023-02-21 |  | 0d |
| 20 |  | Coordinate magazine feature articles | 7d | 2023-02-22 | 2023-03-02 | 19 | 3d |
| 21 |  | Launch public web portal for book | 1w | 2023-02-22 | 2023-02-28 | 19 | 0d |
| 22 |  | Launch social media programs for book | 1w | 2023-03-01 | 2023-03-07 | 21 | 0d |
| 23 |  | Launch complete! | 0d | 2023-03-07 | 2023-03-07 | 20, 21, 22 | 0d |

## Version 2 (saved 2023-09-19, file Gayathree_SimpleAssignControlWork.mpp)

Last finish 2023-03-07 → 2023-02-28 (-7d).

Changed:

| ID | Task | Start | Finish | Duration | Total float | Other |
| --- | --- | --- | --- | --- | --- | --- |
| 5 | Design and order marketing material |  |  |  |  | resources Toby Nixon → Toby Nixon; Zac Woodall |
| 7 | **Internal Launch Phase** |  | 2023-02-17 → 2023-02-10 (-7d) | 18d → 13d |  |  |
| 8 | Kickoff book launch meeting |  |  |  |  | resources Toby Nixon; Sharon Salavaria [50%] → Sharon Salavaria [50%]; Toby Nixon |
| 9 | Plan author's travel itinerary |  |  |  | 14d → 9d | resources Jane Dow; Zac Woodall → Jane Dow |
| 10 | Channel Sales prep |  | 2023-02-08 → 2023-02-01 (-7d) | 2w → 1w |  | resources Zac Woodall → Zac Woodall; Hany Morcos |
| 11 | Complete book launch form | 2023-02-09 → 2023-02-02 (-7d) | 2023-02-10 → 2023-02-03 (-7d) |  |  |  |
| 12 | Prepare book sales kit | 2023-02-09 → 2023-02-02 (-7d) | 2023-02-15 → 2023-02-08 (-7d) |  |  |  |
| 13 | Distribute internal marketing material | 2023-02-16 → 2023-02-09 (-7d) | 2023-02-17 → 2023-02-10 (-7d) |  |  |  |
| 14 | **Public Launch Phase** | 2023-02-20 → 2023-02-13 (-7d) | 2023-03-07 → 2023-02-28 (-7d) |  |  |  |
| 15 | **Author travel and appearances** | 2023-02-20 → 2023-02-13 (-7d) | 2023-02-21 → 2023-02-14 (-7d) |  |  |  |
| 16 | Author radio interview | 2023-02-20 → 2023-02-13 (-7d) | 2023-02-20 → 2023-02-13 (-7d) |  |  |  |
| 17 | Author reading and signing at book fair | 2023-02-21 → 2023-02-14 (-7d) | 2023-02-21 → 2023-02-14 (-7d) |  |  |  |
| 18 | Distribute advance copies | 2023-02-20 → 2023-02-13 (-7d) | 2023-02-21 → 2023-02-14 (-7d) |  |  |  |
| 19 | Distribute book sales kit | 2023-02-20 → 2023-02-13 (-7d) | 2023-02-21 → 2023-02-14 (-7d) |  |  |  |
| 20 | Coordinate magazine feature articles | 2023-02-22 → 2023-02-15 (-7d) | 2023-03-02 → 2023-02-23 (-7d) |  |  |  |
| 21 | Launch public web portal for book | 2023-02-22 → 2023-02-15 (-7d) | 2023-02-28 → 2023-02-21 (-7d) |  |  |  |
| 22 | Launch social media programs for book | 2023-03-01 → 2023-02-22 (-7d) | 2023-03-07 → 2023-02-28 (-7d) |  |  |  |
| 23 | Launch complete! | 2023-03-07 → 2023-02-28 (-7d) | 2023-03-07 → 2023-02-28 (-7d) |  |  |  |

## Version 3 (saved 2023-09-19, file Gayathree_SimpleAssignCostResource.mpp)

Last finish stays 2023-02-28.

Changed:

| ID | Task | Finish | Duration | Total float | Other |
| --- | --- | --- | --- | --- | --- |
| 9 | Plan author's travel itinerary | 2023-01-30 → 2023-02-02 (+3d) | 3d → 6d | 9d → 6d |  |
| 17 | Author reading and signing at book fair |  |  |  | resources none → Toni Poe; Travel [0.1%] |

## Version 4 (saved 2023-09-26, file Gayathree_SimpleFormat.mpp)

Last finish stays 2023-02-28.

Added:

| ID | Task | Duration | Start | Finish | Constraint |
| --- | --- | --- | --- | --- | --- |
| 9 | Prepare book P&L statement | 2d | 2023-01-24 | 2023-01-25 | start no earlier than 2023-01-24 |

## Version 5 (saved 2023-10-17, file Gayathree_SimpleTrackBaseline.mpp)

Last finish stays 2023-02-28.

Changed:

| ID | Task | Start | Finish | Total float | Predecessors | Other |
| --- | --- | --- | --- | --- | --- | --- |
| 1 | **Planning Phase** |  |  |  |  | baseline start none → 2023-01-09; baseline finish none → 2023-01-23 |
| 2 | Assign launch team members |  |  |  |  | baseline start none → 2023-01-09; baseline finish none → 2023-01-09 |
| 3 | Complete author questionnaire |  |  |  |  | baseline start none → 2023-01-10; baseline finish none → 2023-01-16 |
| 4 | Schedule author interviews |  |  |  |  | baseline start none → 2023-01-09; baseline finish none → 2023-01-16 |
| 5 | Design and order marketing material |  |  |  |  | baseline start none → 2023-01-10; baseline finish none → 2023-01-23 |
| 6 | Planning complete! |  |  |  |  | baseline start none → 2023-01-23; baseline finish none → 2023-01-23 |
| 7 | **Internal Launch Phase** |  |  |  |  | baseline start none → 2023-01-24; baseline finish none → 2023-02-10 |
| 8 | Kickoff book launch meeting |  |  |  |  | baseline start none → 2023-01-24; baseline finish none → 2023-01-24 |
| 9 | Prepare book P&L statement | 2023-01-24 → 2023-01-26 (+2d) | 2023-01-25 → 2023-01-27 (+2d) | none → 10d | none → 8 | constraint start no earlier than 2023-01-24 → none; resources none → Carole Poland; baseline start none → 2023-01-26; baseline finish none → 2023-01-27 |
| 10 | Plan author's travel itinerary |  |  |  |  | baseline start none → 2023-01-26; baseline finish none → 2023-02-02 |
| 11 | Channel Sales prep |  |  |  |  | baseline start none → 2023-01-26; baseline finish none → 2023-02-01 |
| 12 | Complete book launch form |  |  |  |  | resources none → Toby Nixon; Vikas Jain; baseline start none → 2023-02-02; baseline finish none → 2023-02-03 |
| 13 | Prepare book sales kit |  |  |  |  | resources none → Hany Morcos; Zac Woodall; baseline start none → 2023-02-02; baseline finish none → 2023-02-08 |
| 14 | Distribute internal marketing material |  |  |  |  | resources none → Zac Woodall; baseline start none → 2023-02-09; baseline finish none → 2023-02-10 |
| 15 | **Public Launch Phase** |  |  |  |  | baseline start none → 2023-02-13; baseline finish none → 2023-02-28 |
| 16 | **Author travel and appearances** |  |  |  |  | baseline start none → 2023-02-13; baseline finish none → 2023-02-14 |
| 17 | Author radio interview |  |  |  |  | resources none → Toni Poe; baseline start none → 2023-02-13; baseline finish none → 2023-02-13 |
| 18 | Author reading and signing at book fair |  |  |  |  | baseline start none → 2023-02-14; baseline finish none → 2023-02-14 |
| 19 | Distribute advance copies |  |  |  |  | resources none → Vikas Jain; Toby Nixon; baseline start none → 2023-02-13; baseline finish none → 2023-02-14 |
| 20 | Distribute book sales kit |  |  |  |  | resources none → Zac Woodall; baseline start none → 2023-02-13; baseline finish none → 2023-02-14 |
| 21 | Coordinate magazine feature articles |  |  |  |  | resources none → Zac Woodall; baseline start none → 2023-02-15; baseline finish none → 2023-02-23 |
| 22 | Launch public web portal for book |  |  |  |  | resources none → Toby Nixon; Vikas Jain; baseline start none → 2023-02-15; baseline finish none → 2023-02-21 |
| 23 | Launch social media programs for book |  |  |  |  | resources none → Toby Nixon; Vikas Jain; baseline start none → 2023-02-22; baseline finish none → 2023-02-28 |
| 24 | Launch complete! |  |  |  |  | baseline start none → 2023-02-28; baseline finish none → 2023-02-28 |

## Version 6 (data date 2023-01-18, saved 2023-10-17, file Gayathree_SimpleTrackActuals.mpp)

Last finish 2023-02-28 → 2023-03-03 (+3d). Complete tasks 0 → 8.

Changed:

| ID | Task | Start | Finish | Duration | Complete | Total float |
| --- | --- | --- | --- | --- | --- | --- |
| 1 | **Planning Phase** | 2023-01-09 A | 2023-01-23 A |  | 0% → 100% | 0d → none |
| 2 | Assign launch team members | 2023-01-09 A | 2023-01-09 A |  | 0% → 100% | 0d → none |
| 3 | Complete author questionnaire | 2023-01-10 A | 2023-01-16 A |  | 0% → 100% | 5d → none |
| 4 | Schedule author interviews | 2023-01-09 A | 2023-01-16 A |  | 0% → 100% | 5d → none |
| 5 | Design and order marketing material | 2023-01-10 A | 2023-01-23 A |  | 0% → 100% | 0d → none |
| 6 | Planning complete! | 2023-01-23 A | 2023-01-23 A |  | 0% → 100% | 0d → none |
| 7 | **Internal Launch Phase** | 2023-01-24 A | 2023-02-10 → 2023-02-15 (+5d) | 13d → 16d | 0% → 50% |  |
| 8 | Kickoff book launch meeting | 2023-01-24 A | 2023-01-24 A |  | 0% → 100% | 0d → none |
| 9 | Prepare book P&L statement | 2023-01-26 A | 2023-01-27 → 2023-01-30 A (+3d) | 2d → 3d | 0% → 100% | 10d → none |
| 10 | Plan author's travel itinerary | 2023-01-26 → 2023-01-27 A (+1d) | 2023-02-02 → 2023-02-06 A (+4d) | 6d → 7d | 0% → 100% | 6d → none |
| 11 | Channel Sales prep | 2023-01-26 A | 2023-02-01 → 2023-02-06 (+5d) | 1w → 8d | 0% → 38% |  |
| 12 | Complete book launch form | 2023-02-02 → 2023-02-07 (+5d) | 2023-02-03 → 2023-02-08 (+5d) |  |  |  |
| 13 | Prepare book sales kit | 2023-02-02 → 2023-02-07 (+5d) | 2023-02-08 → 2023-02-13 (+5d) |  |  |  |
| 14 | Distribute internal marketing material | 2023-02-09 → 2023-02-14 (+5d) | 2023-02-10 → 2023-02-15 (+5d) |  |  |  |
| 15 | **Public Launch Phase** | 2023-02-13 → 2023-02-16 (+3d) | 2023-02-28 → 2023-03-03 (+3d) |  |  |  |
| 16 | **Author travel and appearances** | 2023-02-13 → 2023-02-16 (+3d) | 2023-02-14 → 2023-02-17 (+3d) |  |  |  |
| 17 | Author radio interview | 2023-02-13 → 2023-02-16 (+3d) | 2023-02-13 → 2023-02-16 (+3d) |  |  |  |
| 18 | Author reading and signing at book fair | 2023-02-14 → 2023-02-17 (+3d) | 2023-02-14 → 2023-02-17 (+3d) |  |  |  |
| 19 | Distribute advance copies | 2023-02-13 → 2023-02-16 (+3d) | 2023-02-14 → 2023-02-17 (+3d) |  |  |  |
| 20 | Distribute book sales kit | 2023-02-13 → 2023-02-16 (+3d) | 2023-02-14 → 2023-02-17 (+3d) |  |  |  |
| 21 | Coordinate magazine feature articles | 2023-02-15 → 2023-02-20 (+5d) | 2023-02-23 → 2023-02-28 (+5d) |  |  |  |
| 22 | Launch public web portal for book | 2023-02-15 → 2023-02-20 (+5d) | 2023-02-21 → 2023-02-24 (+3d) |  |  |  |
| 23 | Launch social media programs for book | 2023-02-22 → 2023-02-27 (+5d) | 2023-02-28 → 2023-03-03 (+3d) |  |  |  |
| 24 | Launch complete! | 2023-02-28 → 2023-03-03 (+3d) | 2023-02-28 → 2023-03-03 (+3d) |  |  |  |
